# Programa de Modernización del AIES (ES-L1173)

Schedule from MS Project XML, 2026-11-02 to 2031-06-06.
SIMULACION ACADEMICA: Duraciones y dependencias estimadas, no cronograma oficial
Universidad de El Salvador - ejercicio académico
SIMULACIÓN ACADÉMICA. No constituye planificación aprobada. Fecha de inicio supuesta: 2026-11-02. Jornada supuesta: lunes a viernes, 8 horas/día. Duraciones y vínculos son estimaciones para habilitar el Gantt. Revalidar con PEP, POA, PA, contratos y especialistas antes de usar como cronograma real.

## Schedule

| ID | WBS | Task | Duration | Start | Finish | Predecessors |
| --- | --- | --- | --- | --- | --- | --- |
| 1 | 1 | **1. Obras y adecuaciones** | 1363d | 2027-04-12 | 2031-01-03 |  |
| 2 | 1.1 | **Diseños de las obras aprobados** | 145d | 2027-04-12 | 2027-09-03 |  |
| 3 | 1.1.1 | Diseños de la terminal revisados y aprobados | 90d | 2027-04-12 | 2027-08-13 | 55, 59 |
| 4 | 1.1.2 | Diseños de plataformas y calle Foxtrot revisados y aprobados | 100d | 2027-04-12 | 2027-08-27 | 55, 59 |
| 5 | 1.1.3 | Diseños del estacionamiento y del sistema solar revisados y aprobados | 105d | 2027-04-12 | 2027-09-03 | 55, 59 |
| 6 | 1.1.4 | Diseños del SSEI revisados y aprobados | 70d | 2027-04-12 | 2027-07-16 | 55, 59 |
| 7 | 1.2 | **Terminal de pasajeros ampliada** | 754d | 2028-03-06 | 2030-03-29 |  |
| 8 | 1.2.1 | Estructura y envolvente de la terminal construidas | 330d | 2028-03-06 | 2029-06-08 | 64, 65, 3 |
| 9 | 1.2.2 | Salas de espera, circulación y áreas de apoyo terminadas | 240d | 2028-10-02 | 2029-08-31 | 8SS+150d |
| 10 | 1.2.3 | Instalaciones eléctricas, hidráulicas, climatización y contra incendio recibidas | 250d | 2028-10-16 | 2029-09-28 | 8SS+160d |
| 11 | 1.2.4 | Puentes de abordaje, mobiliario y equipos instalados | 130d | 2029-10-01 | 2030-03-29 | 9, 10 |
| 12 | 1.2.5 | Accesibilidad universal, movilidad del cuidado y criterios de sostenibilidad incorporados | 135d | 2029-02-19 | 2029-08-24 | 9SS+100d |
| 13 | 1.3 | **Plataformas de contacto y remotas** | 775d | 2028-03-06 | 2030-04-19 |  |
| 14 | 1.3.1 | Plataforma de posiciones de contacto construida | 250d | 2028-03-06 | 2029-02-16 | 4, 60, 64, 65 |
| 15 | 1.3.2 | Plataforma de posiciones remotas construida | 220d | 2029-01-15 | 2029-11-16 | 26, 4, 60, 64, 65 |
| 16 | 1.3.3 | Señalización, luces y torres de iluminación de plataforma instaladas | 110d | 2029-11-19 | 2030-04-19 | 14, 15 |
| 17 | 1.4 | **Calle de rodaje Foxtrot** | 404d | 2028-03-06 | 2029-04-13 |  |
| 18 | 1.4.1 | Pavimento y hombros de la calle Foxtrot construidos | 220d | 2028-03-06 | 2029-01-05 | 4, 60, 64, 65 |
| 19 | 1.4.2 | Señalización y balizamiento de la calle Foxtrot instalados | 70d | 2029-01-08 | 2029-04-13 | 18 |
| 20 | 1.5 | **Estacionamiento y energía solar** | 544d | 2028-03-06 | 2029-08-31 |  |
| 21 | 1.5.1 | Edificio de estacionamiento construido | 370d | 2028-03-06 | 2029-08-03 | 5, 64, 65 |
| 22 | 1.5.2 | Sistemas de acceso, tráfico y áreas de alquiler instalados | 140d | 2029-02-19 | 2029-08-31 | 21SS+250d |
| 23 | 1.5.3 | Sistema de generación solar instalado | 160d | 2028-12-04 | 2029-07-13 | 21SS+195d |
| 24 | 1.6 | **SSEI reubicado y en operación** | 313d | 2028-03-06 | 2029-01-12 |  |
| 25 | 1.6.1 | Edificio del SSEI y vías de acceso construidos | 190d | 2028-03-06 | 2028-11-24 | 6, 60, 64, 65 |
| 26 | 1.6.2 | SSEI en funcionamiento en la nueva ubicación | 35d | 2028-11-27 | 2029-01-12 | 25 |

Notes:
- 1: NODO DE LA EDT: 1. La duración se calcula desde los paquetes subordinados. Cronograma estimado no oficial.
- 2: NODO DE LA EDT: 1.1. La duración se calcula desde los paquetes subordinados. Cronograma estimado no oficial.
- 3: ORIGEN EDT: docs/edt.md / CÓDIGO EDT: 1.1.1 / DESCRIPCIÓN: Revisión de los diseños de la terminal de fase 2, sus especificaciones y los ajustes necesarios antes de la licitación, incluida la coordinación con la metodología BIM. / CRITERIO DE ACEPTACIÓN: Expediente de diseño aprobado por la UEP, sin observaciones que impidan licitar la terminal. / RESPONSABLE: Especialista técnico / REFERENCIA: P1.1.1 / CRONOGRAMA ACADÉMICO PROPUESTO: 90 días hábiles (8 h/día). Las fechas y dependencias son supuestos de planificación, no datos oficiales ni garantías de ejecución. Verificar y reemplazar con PEP/POA/PA y contrataciones.
- 4: ORIGEN EDT: docs/edt.md / CÓDIGO EDT: 1.1.2 / DESCRIPCIÓN: Revisión de los diseños de la plataforma de contacto, la plataforma remota y la calle de rodaje Foxtrot, con la geometría del lado aire. / CRITERIO DE ACEPTACIÓN: Diseños aprobados por la UEP y compatibles con el protocolo de seguridad operacional que debe autorizar la AAC. / RESPONSABLE: Especialista técnico / REFERENCIA: P1.1.2, P1.1.3 / CRONOGRAMA ACADÉMICO PROPUESTO: 100 días hábiles (8 h/día). Las fechas y dependencias son supuestos de planificación, no datos oficiales ni garantías de ejecución. Verificar y reemplazar con PEP/POA/PA y contrataciones.
- 5: ORIGEN EDT: docs/edt.md / CÓDIGO EDT: 1.1.3 / DESCRIPCIÓN: Revisión del edificio de estacionamiento, sus sistemas de acceso y el sistema fotovoltaico, con la capacidad definida en el diseño adoptado para el préstamo. / CRITERIO DE ACEPTACIÓN: Expediente de diseño aprobado, con accesibilidad universal y el sistema solar incorporados. / RESPONSABLE: Especialista técnico / REFERENCIA: P1.2.1 / CRONOGRAMA ACADÉMICO PROPUESTO: 105 días hábiles (8 h/día). Las fechas y dependencias son supuestos de planificación, no datos oficiales ni garantías de ejecución. Verificar y reemplazar con PEP/POA/PA y contrataciones.
- 6: ORIGEN EDT: docs/edt.md / CÓDIGO EDT: 1.1.4 / DESCRIPCIÓN: Revisión del diseño del nuevo edificio del Servicio de Salvamento y Extinción de Incendios y de sus vías de acceso. / CRITERIO DE ACEPTACIÓN: Diseños aprobados y aptos para construir el SSEI antes de la plataforma remota. / RESPONSABLE: Especialista técnico / REFERENCIA: P1.3.1 / CRONOGRAMA ACADÉMICO PROPUESTO: 70 días hábiles (8 h/día). Las fechas y dependencias son supuestos de planificación, no datos oficiales ni garantías de ejecución. Verificar y reemplazar con PEP/POA/PA y contrataciones.
- 7: NODO DE LA EDT: 1.2. La duración se calcula desde los paquetes subordinados. Cronograma estimado no oficial.
- 8: ORIGEN EDT: docs/edt.md / CÓDIGO EDT: 1.2.1 / DESCRIPCIÓN: Estructura de concreto, cubierta metálica, fachadas y cerramientos del edificio de tres niveles de la fase 2. / CRITERIO DE ACEPTACIÓN: Estructura y envolvente recibidas conforme a planos y especificaciones, con el aeropuerto en operación. / RESPONSABLE: Coordinador general de obra / REFERENCIA: P1.1.1 / CRONOGRAMA ACADÉMICO PROPUESTO: 330 días hábiles (8 h/día). Las fechas y dependencias son supuestos de planificación, no datos oficiales ni garantías de ejecución. Verificar y reemplazar con PEP/POA/PA y contrataciones.
- 9: ORIGEN EDT: docs/edt.md / CÓDIGO EDT: 1.2.2 / DESCRIPCIÓN: Seis salas de espera, pasillos, locales, áreas técnicas y espacios de apoyo de los tres niveles, integrados a la terminal existente. / CRITERIO DE ACEPTACIÓN: Áreas terminadas y habilitadas para circulación y espera de pasajeros, en continuidad con la fase 1. / RESPONSABLE: Coordinador general de obra / REFERENCIA: P1.1.1 / CRONOGRAMA ACADÉMICO PROPUESTO: 240 días hábiles (8 h/día). Las fechas y dependencias son supuestos de planificación, no datos oficiales ni garantías de ejecución. Verificar y reemplazar con PEP/POA/PA y contrataciones.
- 10: ORIGEN EDT: docs/edt.md / CÓDIGO EDT: 1.2.3 / DESCRIPCIÓN: Redes y equipos de energía, agua, drenaje, climatización y protección contra incendios de la nueva terminal. / CRITERIO DE ACEPTACIÓN: Sistemas probados, recibidos y aptos para la operación de la terminal. / RESPONSABLE: Coordinador general de obra / REFERENCIA: P1.1.1 / CRONOGRAMA ACADÉMICO PROPUESTO: 250 días hábiles (8 h/día). Las fechas y dependencias son supuestos de planificación, no datos oficiales ni garantías de ejecución. Verificar y reemplazar con PEP/POA/PA y contrataciones.
- 11: ORIGEN EDT: docs/edt.md / CÓDIGO EDT: 1.2.4 / DESCRIPCIÓN: Puentes de las nuevas salas, mobiliario, escáneres y demás equipamiento previsto para la ampliación. / CRITERIO DE ACEPTACIÓN: Equipos instalados, probados y entregados con sus manuales. / RESPONSABLE: Coordinador general de obra / REFERENCIA: P1.1.1 / CRONOGRAMA ACADÉMICO PROPUESTO: 130 días hábiles (8 h/día). Las fechas y dependencias son supuestos de planificación, no datos oficiales ni garantías de ejecución. Verificar y reemplazar con PEP/POA/PA y contrataciones.
- 12: ORIGEN EDT: docs/edt.md / CÓDIGO EDT: 1.2.5 / DESCRIPCIÓN: Recorridos, servicios y medidas de eficiencia de la terminal para personas con discapacidad, movilidad del cuidado y el estándar previsto para EDGE. / CRITERIO DE ACEPTACIÓN: Verificación de accesibilidad y de las medidas de sostenibilidad del diseño aprobado. La certificación EDGE corresponde al paquete 2.6.1. / RESPONSABLE: Especialista socioambiental / REFERENCIA: P1.1.1 / CRONOGRAMA ACADÉMICO PROPUESTO: 135 días hábiles (8 h/día). Las fechas y dependencias son supuestos de planificación, no datos oficiales ni garantías de ejecución. Verificar y reemplazar con PEP/POA/PA y contrataciones.
- 13: NODO DE LA EDT: 1.3. La duración se calcula desde los paquetes subordinados. Cronograma estimado no oficial.
- 14: ORIGEN EDT: docs/edt.md / CÓDIGO EDT: 1.3.1 / DESCRIPCIÓN: Pavimento, drenaje y servicios de la plataforma asociada a las seis nuevas posiciones de contacto. / CRITERIO DE ACEPTACIÓN: Plataforma construida conforme al diseño y apta para el estacionamiento de aeronaves en posiciones de contacto. / RESPONSABLE: Coordinador general de obra / REFERENCIA: P1.1.2 / CRONOGRAMA ACADÉMICO PROPUESTO: 250 días hábiles (8 h/día). Las fechas y dependencias son supuestos de planificación, no datos oficiales ni garantías de ejecución. Verificar y reemplazar con PEP/POA/PA y contrataciones.
- 15: ORIGEN EDT: docs/edt.md / CÓDIGO EDT: 1.3.2 / DESCRIPCIÓN: Nueva plataforma remota que repone el área ocupada por la ampliación y mantiene la capacidad de posiciones remotas. / CRITERIO DE ACEPTACIÓN: Plataforma remota construida. Su inicio requiere el paquete 1.6.2 ya aceptado: el SSEI operando en la nueva ubicación. / RESPONSABLE: Coordinador general de obra / REFERENCIA: P1.1.2 / CRONOGRAMA ACADÉMICO PROPUESTO: 220 días hábiles (8 h/día). Las fechas y dependencias son supuestos de planificación, no datos oficiales ni garantías de ejecución. Verificar y reemplazar con PEP/POA/PA y contrataciones.
- 16: ORIGEN EDT: docs/edt.md / CÓDIGO EDT: 1.3.3 / DESCRIPCIÓN: Señalización horizontal, luces de plataforma y torres de iluminación de las plataformas nuevas. / CRITERIO DE ACEPTACIÓN: Ayudas visuales instaladas y recibidas para la operación. / RESPONSABLE: Coordinador general de obra / REFERENCIA: P1.1.2 / CRONOGRAMA ACADÉMICO PROPUESTO: 110 días hábiles (8 h/día). Las fechas y dependencias son supuestos de planificación, no datos oficiales ni garantías de ejecución. Verificar y reemplazar con PEP/POA/PA y contrataciones.
- 17: NODO DE LA EDT: 1.4. La duración se calcula desde los paquetes subordinados. Cronograma estimado no oficial.
- 18: ORIGEN EDT: docs/edt.md / CÓDIGO EDT: 1.4.1 / DESCRIPCIÓN: Calle de rodaje Foxtrot, incluidos terracería, pavimento y hombros, como enlace entre la nueva plataforma y la calle de rodaje Alfa. / CRITERIO DE ACEPTACIÓN: Calle construida conforme al diseño y conectada a la calle Alfa. / RESPONSABLE: Coordinador general de obra / REFERENCIA: P1.1.3 / CRONOGRAMA ACADÉMICO PROPUESTO: 220 días hábiles (8 h/día). Las fechas y dependencias son supuestos de planificación, no datos oficiales ni garantías de ejecución. Verificar y reemplazar con PEP/POA/PA y contrataciones.
- 19: ORIGEN EDT: docs/edt.md / CÓDIGO EDT: 1.4.2 / DESCRIPCIÓN: Señalización horizontal, balizamiento e iluminación de borde y de los puntos de espera de la calle Foxtrot. / CRITERIO DE ACEPTACIÓN: Ayudas visuales instaladas y operativas. / RESPONSABLE: Coordinador general de obra / REFERENCIA: P1.1.3 / CRONOGRAMA ACADÉMICO PROPUESTO: 70 días hábiles (8 h/día). Las fechas y dependencias son supuestos de planificación, no datos oficiales ni garantías de ejecución. Verificar y reemplazar con PEP/POA/PA y contrataciones.
- 20: NODO DE LA EDT: 1.5. La duración se calcula desde los paquetes subordinados. Cronograma estimado no oficial.
- 21: ORIGEN EDT: docs/edt.md / CÓDIGO EDT: 1.5.1 / DESCRIPCIÓN: Edificio de estacionamiento vehicular de la ampliación, con la capacidad del diseño aprobado para el préstamo. / CRITERIO DE ACEPTACIÓN: Edificio construido, con circulaciones y plazas conformes al diseño, incluida la accesibilidad universal. / RESPONSABLE: Coordinador general de obra / REFERENCIA: P1.2.1 / CRONOGRAMA ACADÉMICO PROPUESTO: 370 días hábiles (8 h/día). Las fechas y dependencias son supuestos de planificación, no datos oficiales ni garantías de ejecución. Verificar y reemplazar con PEP/POA/PA y contrataciones.
- 22: ORIGEN EDT: docs/edt.md / CÓDIGO EDT: 1.5.2 / DESCRIPCIÓN: Control de acceso, gestión de tráfico interno y áreas de alquiler de vehículos del nuevo estacionamiento. / CRITERIO DE ACEPTACIÓN: Sistemas probados y áreas de alquiler habilitadas. / RESPONSABLE: Coordinador general de obra / REFERENCIA: P1.2.1 / CRONOGRAMA ACADÉMICO PROPUESTO: 140 días hábiles (8 h/día). Las fechas y dependencias son supuestos de planificación, no datos oficiales ni garantías de ejecución. Verificar y reemplazar con PEP/POA/PA y contrataciones.
- 23: ORIGEN EDT: docs/edt.md / CÓDIGO EDT: 1.5.3 / DESCRIPCIÓN: Sistema fotovoltaico del edificio de estacionamiento, previsto para cubrir una parte sustancial de la demanda eléctrica del aeropuerto. / CRITERIO DE ACEPTACIÓN: Sistema instalado, probado y entregado. La energía generada se medirá después, con el indicador T1. / RESPONSABLE: Coordinador general de obra / REFERENCIA: P1.2.1, T1 / CRONOGRAMA ACADÉMICO PROPUESTO: 160 días hábiles (8 h/día). Las fechas y dependencias son supuestos de planificación, no datos oficiales ni garantías de ejecución. Verificar y reemplazar con PEP/POA/PA y contrataciones.
- 24: NODO DE LA EDT: 1.6. La duración se calcula desde los paquetes subordinados. Cronograma estimado no oficial.
- 25: ORIGEN EDT: docs/edt.md / CÓDIGO EDT: 1.6.1 / DESCRIPCIÓN: Nuevo edificio del Servicio de Salvamento y Extinción de Incendios y las vías que permiten su salida a la plataforma. / CRITERIO DE ACEPTACIÓN: Edificio y vías construidos conforme al diseño y a los requisitos del servicio de salvamento. / RESPONSABLE: Coordinador general de obra / REFERENCIA: P1.3.1 / CRONOGRAMA ACADÉMICO PROPUESTO: 190 días hábiles (8 h/día). Las fechas y dependencias son supuestos de planificación, no datos oficiales ni garantías de ejecución. Verificar y reemplazar con PEP/POA/PA y contrataciones.
- 26: ORIGEN EDT: docs/edt.md / CÓDIGO EDT: 1.6.2 / DESCRIPCIÓN: Traslado del servicio, pruebas y puesta en operación del SSEI en el edificio nuevo, con el servicio actual cubierto durante el traslado. / CRITERIO DE ACEPTACIÓN: SSEI operando en la nueva sede. Esta aceptación es condición para iniciar el paquete 1.3.2. / RESPONSABLE: Coordinador del Programa / REFERENCIA: P1.3.1 / CRONOGRAMA ACADÉMICO PROPUESTO: 35 días hábiles (8 h/día). Las fechas y dependencias son supuestos de planificación, no datos oficiales ni garantías de ejecución. Verificar y reemplazar con PEP/POA/PA y contrataciones.

| ID | WBS | Task | Duration | Start | Finish | Predecessors |
| --- | --- | --- | --- | --- | --- | --- |
| 27 | 1.7 | **Supervisión, PGAS de obra y recepción** | 1034d | 2028-03-06 | 2031-01-03 |  |
| 28 | 1.7.1 | Supervisión de la terminal y del estacionamiento ejecutada | 580d | 2028-03-06 | 2030-05-24 | 8SS, 21SS |
| 29 | 1.7.2 | Supervisión de plataformas, calle Foxtrot y SSEI ejecutada | 515d | 2028-03-06 | 2030-02-22 | 25SS, 14SS |
| 30 | 1.7.3 | PGAS de construcción implementado | 650d | 2028-03-06 | 2030-08-30 | 8SS, 14SS, 21SS |
| 31 | 1.7.4 | Planos de obra ejecutada y actas de recepción aprobados | 90d | 2030-09-02 | 2031-01-03 | 11, 12, 16, 19, 22, 23, 26, 28, 29, 30 |
| 32 | 2 | **2. Fortalecimiento institucional** | 901d | 2027-10-04 | 2030-03-22 |  |
| 33 | 2.1 | Plan estratégico del sistema aeronáutico aprobado | 150d | 2027-10-04 | 2028-04-28 | 66, 55 |
| 34 | 2.2 | **Plan Maestro actualizado y funcionarios capacitados** | 355d | 2028-05-01 | 2029-04-20 |  |
| 35 | 2.2.1 | Plan Maestro Aeroportuario actualizado y aprobado | 210d | 2028-05-01 | 2029-02-16 | 66, 33 |
| 36 | 2.2.2 | Funcionarios capacitados en planificación, gestión y operación | 45d | 2029-02-19 | 2029-04-20 | 35 |
| 37 | 2.3 | **Estrategia y capacitación BIM** | 222d | 2027-10-04 | 2028-05-12 |  |
| 38 | 2.3.1 | Estrategia BIM aprobada | 95d | 2027-10-04 | 2028-02-11 | 66 |
| 39 | 2.3.2 | Personal de ingeniería capacitado en BIM | 65d | 2028-02-14 | 2028-05-12 | 38 |
| 40 | 2.4 | Estudio de conectividad terrestre entregado | 160d | 2027-10-04 | 2028-05-12 | 66 |
| 41 | 2.5 | Estudio de diversificación de destinos entregado | 160d | 2027-10-04 | 2028-05-12 | 66 |
| 42 | 2.6 | **Auditoría y capacitación EDGE** | 208d | 2029-08-27 | 2030-03-22 |  |
| 43 | 2.6.1 | Auditoría para la certificación EDGE realizada | 100d | 2029-08-27 | 2030-01-11 | 23, 12 |
| 44 | 2.6.2 | Personal capacitado en certificación EDGE | 50d | 2030-01-14 | 2030-03-22 | 43 |
| 45 | 2.7 | Estudio de separación de flujos entregado | 160d | 2027-10-04 | 2028-05-12 | 66 |
| 46 | 2.8 | Estudio de movilidad interna entregado | 135d | 2027-10-04 | 2028-04-07 | 66 |
| 47 | 2.9 | Programa de igualdad e inclusión ejecutado | 150d | 2027-10-04 | 2028-04-28 | 66 |
| 48 | 3 | **3. Administración, evaluación y auditorías** | 1678d | 2026-11-02 | 2031-06-06 |  |
| 49 | 3.1 | **Condiciones de arranque cumplidas** | 152d | 2026-11-02 | 2027-04-02 |  |
| 50 | 3.1.1 | Unidad ejecutora conformada y en funciones | 35d | 2026-11-02 | 2026-12-18 |  |
| 51 | 3.1.2 | Reglamento operativo vigente | 35d | 2026-12-21 | 2027-02-05 | 50 |
| 52 | 3.1.3 | Convenio de transferencia de recursos vigente | 25d | 2027-02-08 | 2027-03-12 | 51 |
| 53 | 3.1.4 | Cuenta especial aperturada | 15d | 2027-03-15 | 2027-04-02 | 52 |

Notes:
- 27: NODO DE LA EDT: 1.7. La duración se calcula desde los paquetes subordinados. Cronograma estimado no oficial.
- 28: ORIGEN EDT: docs/edt.md / CÓDIGO EDT: 1.7.1 / DESCRIPCIÓN: Supervisión técnica de la terminal, el estacionamiento y el sistema solar, incluidas estimaciones y control de calidad. / CRITERIO DE ACEPTACIÓN: Informes de supervisión y estimaciones revisadas durante toda la obra, sin saldos de supervisión pendientes al recibir. / RESPONSABLE: Firma de supervisión / REFERENCIA: P1.4.1 / CRONOGRAMA ACADÉMICO PROPUESTO: 580 días hábiles (8 h/día). Las fechas y dependencias son supuestos de planificación, no datos oficiales ni garantías de ejecución. Verificar y reemplazar con PEP/POA/PA y contrataciones.
- 29: ORIGEN EDT: docs/edt.md / CÓDIGO EDT: 1.7.2 / DESCRIPCIÓN: Supervisión técnica de las obras del lado aire y del SSEI, con control de las restricciones operacionales. / CRITERIO DE ACEPTACIÓN: Informes de supervisión del lado aire completos y estimaciones revisadas. / RESPONSABLE: Firma de supervisión / REFERENCIA: P1.4.2, P1.4.3 / CRONOGRAMA ACADÉMICO PROPUESTO: 515 días hábiles (8 h/día). Las fechas y dependencias son supuestos de planificación, no datos oficiales ni garantías de ejecución. Verificar y reemplazar con PEP/POA/PA y contrataciones.
- 30: ORIGEN EDT: docs/edt.md / CÓDIGO EDT: 1.7.3 / DESCRIPCIÓN: Aplicación del Plan de Gestión Ambiental y Social durante las obras: residuos, agua, aire, ruido, tráfico, seguridad y salud, flora y fauna, hallazgos y cierre de instalaciones temporales. / CRITERIO DE ACEPTACIÓN: Informes de cumplimiento del PGAS aceptados por la supervisión y por el especialista socioambiental. / RESPONSABLE: Especialista socioambiental / REFERENCIA: P1.4.1 a P1.4.3 / CRONOGRAMA ACADÉMICO PROPUESTO: 650 días hábiles (8 h/día). Las fechas y dependencias son supuestos de planificación, no datos oficiales ni garantías de ejecución. Verificar y reemplazar con PEP/POA/PA y contrataciones.
- 31: ORIGEN EDT: docs/edt.md / CÓDIGO EDT: 1.7.4 / DESCRIPCIÓN: Planos de lo construido, levantamiento de observaciones y actas de recepción de las obras del Componente I. / CRITERIO DE ACEPTACIÓN: Actas de recepción firmadas y planos de obra ejecutada entregados a CEPA. / RESPONSABLE: Coordinador general de obra / REFERENCIA: P1.1.1 a P1.3.1 / CRONOGRAMA ACADÉMICO PROPUESTO: 90 días hábiles (8 h/día). Las fechas y dependencias son supuestos de planificación, no datos oficiales ni garantías de ejecución. Verificar y reemplazar con PEP/POA/PA y contrataciones.
- 32: NODO DE LA EDT: 2. La duración se calcula desde los paquetes subordinados. Cronograma estimado no oficial.
- 33: ORIGEN EDT: docs/edt.md / CÓDIGO EDT: 2.1 / DESCRIPCIÓN: Plan estratégico para el desarrollo del sistema aeronáutico de El Salvador, con lineamientos de infraestructura, operación, normativa y sostenibilidad del sector. / CRITERIO DE ACEPTACIÓN: Documento aprobado por CEPA y recibido por el BID conforme a los términos de referencia. / RESPONSABLE: Especialista de planificación y monitoreo / REFERENCIA: P2.1 / CRONOGRAMA ACADÉMICO PROPUESTO: 150 días hábiles (8 h/día). Las fechas y dependencias son supuestos de planificación, no datos oficiales ni garantías de ejecución. Verificar y reemplazar con PEP/POA/PA y contrataciones.
- 34: NODO DE LA EDT: 2.2. La duración se calcula desde los paquetes subordinados. Cronograma estimado no oficial.
- 35: ORIGEN EDT: docs/edt.md / CÓDIGO EDT: 2.2.1 / DESCRIPCIÓN: Actualización del Plan Maestro del AIES con la demanda vigente y las obras de esta fase, como guía de las inversiones posteriores. / CRITERIO DE ACEPTACIÓN: Plan Maestro actualizado, aprobado por CEPA y entregado al BID. / RESPONSABLE: Especialista de planificación y monitoreo / REFERENCIA: P2.2 / CRONOGRAMA ACADÉMICO PROPUESTO: 210 días hábiles (8 h/día). Las fechas y dependencias son supuestos de planificación, no datos oficiales ni garantías de ejecución. Verificar y reemplazar con PEP/POA/PA y contrataciones.
- 36: ORIGEN EDT: docs/edt.md / CÓDIGO EDT: 2.2.2 / DESCRIPCIÓN: Capacitación del personal de CEPA para implementar el Plan Maestro, dirigida a ingeniería, planificación, proyectos estratégicos y gerencia aeroportuaria. / CRITERIO DE ACEPTACIÓN: Al menos 21 funcionarios con la asistencia mínima y la evaluación aprobadas. / RESPONSABLE: Especialista de planificación y monitoreo / REFERENCIA: P2.2, R2.1 / CRONOGRAMA ACADÉMICO PROPUESTO: 45 días hábiles (8 h/día). Las fechas y dependencias son supuestos de planificación, no datos oficiales ni garantías de ejecución. Verificar y reemplazar con PEP/POA/PA y contrataciones.
- 37: NODO DE LA EDT: 2.3. La duración se calcula desde los paquetes subordinados. Cronograma estimado no oficial.
- 38: ORIGEN EDT: docs/edt.md / CÓDIGO EDT: 2.3.1 / DESCRIPCIÓN: Estrategia para aplicar Building Information Modelling en el diseño, la construcción y la operación de la infraestructura de CEPA. / CRITERIO DE ACEPTACIÓN: Estrategia aprobada por CEPA, con el arreglo de datos y los roles definidos. / RESPONSABLE: Especialista técnico / REFERENCIA: P2.3 / CRONOGRAMA ACADÉMICO PROPUESTO: 95 días hábiles (8 h/día). Las fechas y dependencias son supuestos de planificación, no datos oficiales ni garantías de ejecución. Verificar y reemplazar con PEP/POA/PA y contrataciones.
- 39: ORIGEN EDT: docs/edt.md / CÓDIGO EDT: 2.3.2 / DESCRIPCIÓN: Capacitación del personal de ingeniería de CEPA para usar la estrategia BIM en este programa y en los siguientes. / CRITERIO DE ACEPTACIÓN: Personal previsto capacitado y materiales de la capacitación entregados. / RESPONSABLE: Especialista técnico / REFERENCIA: P2.3 / CRONOGRAMA ACADÉMICO PROPUESTO: 65 días hábiles (8 h/día). Las fechas y dependencias son supuestos de planificación, no datos oficiales ni garantías de ejecución. Verificar y reemplazar con PEP/POA/PA y contrataciones.
- 40: ORIGEN EDT: docs/edt.md / CÓDIGO EDT: 2.4 / DESCRIPCIÓN: Estudio de acceso terrestre al AIES, con alternativas hacia San Salvador y destinos turísticos, y criterios de sostenibilidad e inclusión. / CRITERIO DE ACEPTACIÓN: Informe final aprobado, con recomendaciones utilizables en el Plan Maestro. / RESPONSABLE: Especialista de planificación y monitoreo / REFERENCIA: P2.4 / CRONOGRAMA ACADÉMICO PROPUESTO: 160 días hábiles (8 h/día). Las fechas y dependencias son supuestos de planificación, no datos oficiales ni garantías de ejecución. Verificar y reemplazar con PEP/POA/PA y contrataciones.
- 41: ORIGEN EDT: docs/edt.md / CÓDIGO EDT: 2.5 / DESCRIPCIÓN: Estudio de mercado de orígenes y destinos internacionales y de aerolíneas potenciales. No incluye la apertura de rutas. / CRITERIO DE ACEPTACIÓN: Informe final aprobado, con mercados y destinos priorizados. / RESPONSABLE: Especialista de planificación y monitoreo / REFERENCIA: P2.5 / CRONOGRAMA ACADÉMICO PROPUESTO: 160 días hábiles (8 h/día). Las fechas y dependencias son supuestos de planificación, no datos oficiales ni garantías de ejecución. Verificar y reemplazar con PEP/POA/PA y contrataciones.
- 42: NODO DE LA EDT: 2.6. La duración se calcula desde los paquetes subordinados. Cronograma estimado no oficial.
- 43: ORIGEN EDT: docs/edt.md / CÓDIGO EDT: 2.6.1 / DESCRIPCIÓN: Auditoría y acompañamiento para obtener la certificación EDGE de las edificaciones incluidas en el programa. / CRITERIO DE ACEPTACIÓN: Informe de auditoría entregado y dictamen del proceso de certificación emitido. / RESPONSABLE: Especialista técnico / REFERENCIA: P2.6 / CRONOGRAMA ACADÉMICO PROPUESTO: 100 días hábiles (8 h/día). Las fechas y dependencias son supuestos de planificación, no datos oficiales ni garantías de ejecución. Verificar y reemplazar con PEP/POA/PA y contrataciones.
- 44: ORIGEN EDT: docs/edt.md / CÓDIGO EDT: 2.6.2 / DESCRIPCIÓN: Capacitación para que CEPA mantenga los criterios de la certificación en la operación y en obras futuras. / CRITERIO DE ACEPTACIÓN: Personal previsto capacitado y registro de la capacitación entregado. / RESPONSABLE: Especialista técnico / REFERENCIA: P2.6 / CRONOGRAMA ACADÉMICO PROPUESTO: 50 días hábiles (8 h/día). Las fechas y dependencias son supuestos de planificación, no datos oficiales ni garantías de ejecución. Verificar y reemplazar con PEP/POA/PA y contrataciones.
- 45: ORIGEN EDT: docs/edt.md / CÓDIGO EDT: 2.7 / DESCRIPCIÓN: Estudio de las obras necesarias para separar llegadas y salidas en la terminal antigua. El estudio no incluye ejecutar esas obras. / CRITERIO DE ACEPTACIÓN: Informe aprobado, con las intervenciones identificadas y priorizadas. / RESPONSABLE: Especialista técnico / REFERENCIA: P2.7 / CRONOGRAMA ACADÉMICO PROPUESTO: 160 días hábiles (8 h/día). Las fechas y dependencias son supuestos de planificación, no datos oficiales ni garantías de ejecución. Verificar y reemplazar con PEP/POA/PA y contrataciones.
- 46: ORIGEN EDT: docs/edt.md / CÓDIGO EDT: 2.8 / DESCRIPCIÓN: Estudio de tráfico en las vías internas del AIES, con énfasis en el acceso al nuevo estacionamiento y en los flujos de dejar y recoger pasajeros. / CRITERIO DE ACEPTACIÓN: Informe aprobado, con los puntos de conflicto y las medidas recomendadas. / RESPONSABLE: Especialista técnico / REFERENCIA: P2.8 / CRONOGRAMA ACADÉMICO PROPUESTO: 135 días hábiles (8 h/día). Las fechas y dependencias son supuestos de planificación, no datos oficiales ni garantías de ejecución. Verificar y reemplazar con PEP/POA/PA y contrataciones.
- 47: ORIGEN EDT: docs/edt.md / CÓDIGO EDT: 2.9 / DESCRIPCIÓN: Capacitación a personal de CEPA en igualdad de oportunidades, prevención de violencia y acoso, inclusión de personas con discapacidad y comunicación no sexista. / CRITERIO DE ACEPTACIÓN: Programa ejecutado y al menos 300 funcionarios con la capacitación completada. / RESPONSABLE: Especialista socioambiental / REFERENCIA: P2.9, T2 / CRONOGRAMA ACADÉMICO PROPUESTO: 150 días hábiles (8 h/día). Las fechas y dependencias son supuestos de planificación, no datos oficiales ni garantías de ejecución. Verificar y reemplazar con PEP/POA/PA y contrataciones.
- 48: NODO DE LA EDT: 3. La duración se calcula desde los paquetes subordinados. Cronograma estimado no oficial.
- 49: NODO DE LA EDT: 3.1. La duración se calcula desde los paquetes subordinados. Cronograma estimado no oficial.
- 50: ORIGEN EDT: docs/edt.md / CÓDIGO EDT: 3.1.1 / DESCRIPCIÓN: Selección del coordinador, del coordinador general de obra y de los especialistas de adquisiciones, finanzas, planificación, técnica y socioambiental, con dedicación exclusiva. / CRITERIO DE ACEPTACIÓN: Nombramientos vigentes y equipo trabajando antes del primer desembolso. / RESPONSABLE: Coordinador del Programa / REFERENCIA: Condición de desembolso / CRONOGRAMA ACADÉMICO PROPUESTO: 35 días hábiles (8 h/día). Las fechas y dependencias son supuestos de planificación, no datos oficiales ni garantías de ejecución. Verificar y reemplazar con PEP/POA/PA y contrataciones.
- 51: ORIGEN EDT: docs/edt.md / CÓDIGO EDT: 3.1.2 / DESCRIPCIÓN: Reglamento Operativo del Programa, con el sistema de gestión ambiental y social y el plan de acción ambiental y social como anexos. / CRITERIO DE ACEPTACIÓN: ROP con no objeción del BID y aprobación de CEPA. / RESPONSABLE: Coordinador del Programa / REFERENCIA: Condición de desembolso / CRONOGRAMA ACADÉMICO PROPUESTO: 35 días hábiles (8 h/día). Las fechas y dependencias son supuestos de planificación, no datos oficiales ni garantías de ejecución. Verificar y reemplazar con PEP/POA/PA y contrataciones.
- 52: ORIGEN EDT: docs/edt.md / CÓDIGO EDT: 3.1.3 / DESCRIPCIÓN: Convenio entre la República de El Salvador y CEPA para transferir los recursos del préstamo y fijar las obligaciones de ejecución. / CRITERIO DE ACEPTACIÓN: Convenio suscrito y vigente. / RESPONSABLE: Coordinador del Programa / REFERENCIA: Condición de desembolso / CRONOGRAMA ACADÉMICO PROPUESTO: 25 días hábiles (8 h/día). Las fechas y dependencias son supuestos de planificación, no datos oficiales ni garantías de ejecución. Verificar y reemplazar con PEP/POA/PA y contrataciones.
- 53: ORIGEN EDT: docs/edt.md / CÓDIGO EDT: 3.1.4 / DESCRIPCIÓN: Cuenta especial del programa en el Banco Central de Reserva, gestionada con la Dirección General de Tesorería. / CRITERIO DE ACEPTACIÓN: Cuenta abierta y habilitada para recibir desembolsos. / RESPONSABLE: Especialista financiero / REFERENCIA: Arreglo de ejecución / CRONOGRAMA ACADÉMICO PROPUESTO: 15 días hábiles (8 h/día). Las fechas y dependencias son supuestos de planificación, no datos oficiales ni garantías de ejecución. Verificar y reemplazar con PEP/POA/PA y contrataciones.

| ID | WBS | Task | Duration | Start | Finish | Predecessors |
| --- | --- | --- | --- | --- | --- | --- |
| 54 | 3.2 | **Planes de ejecución aprobados** | 96d | 2027-02-08 | 2027-05-14 |  |
| 55 | 3.2.1 | Plan de ejecución plurianual aprobado | 35d | 2027-02-08 | 2027-03-26 | 50, 51 |
| 56 | 3.2.2 | Planes operativos anuales aprobados | 20d | 2027-03-29 | 2027-04-23 | 55 |
| 57 | 3.2.3 | Plan de adquisiciones aprobado | 35d | 2027-03-29 | 2027-05-14 | 55 |
| 58 | 3.3 | **Condiciones socioambientales y de seguridad operacional** | 1370d | 2027-02-08 | 2030-11-08 |  |
| 59 | 3.3.1 | Sistema de gestión ambiental y social y plan de acción vigentes | 45d | 2027-02-08 | 2027-04-09 | 51 |
| 60 | 3.3.2 | Protocolo de seguridad operacional aprobado por la AAC | 45d | 2027-08-30 | 2027-10-29 | 4, 59 |
| 61 | 3.3.3 | Mecanismo de quejas y reclamos en operación | 20d | 2027-04-12 | 2027-05-07 | 59 |
| 62 | 3.3.4 | Informes de cumplimiento socioambiental presentados | 700d | 2028-03-06 | 2030-11-08 | 8SS, 14SS |
| 63 | 3.4 | **Contratos del programa firmados** | 439d | 2026-12-21 | 2028-03-03 |  |
| 64 | 3.4.1 | Contratos de obras del Componente I firmados | 130d | 2027-09-06 | 2028-03-03 | 3, 4, 5, 6, 57, 53 |
| 65 | 3.4.2 | Contrato de supervisión firmado | 85d | 2027-05-17 | 2027-09-10 | 57, 59 |
| 66 | 3.4.3 | Contratos de consultorías del Componente II firmados | 100d | 2027-05-17 | 2027-10-01 | 57, 53 |
| 67 | 3.4.4 | Contratos de la unidad ejecutora, evaluación y auditoría firmados | 50d | 2026-12-21 | 2027-02-26 | 50 |
| 68 | 3.5 | **Control financiero, evaluación y cierre** | 1286d | 2027-11-29 | 2031-06-06 |  |
| 69 | 3.5.1 | Desembolsos justificados e informes financieros presentados | 850d | 2027-11-29 | 2031-02-28 | 64SS+60d |
| 70 | 3.5.2 | Auditorías externas emitidas | 830d | 2027-12-20 | 2031-02-21 | 64SS+75d |
| 71 | 3.5.3 | Evaluaciones de medio término y de cierre realizadas | 830d | 2027-11-29 | 2031-01-31 | 64SS+60d |
| 72 | 3.5.4 | Informe de terminación y cierre administrativo del programa | 70d | 2031-03-03 | 2031-06-06 | 31, 36, 39, 40, 41, 44, 45, 46, 47, 62, 69, 70, 71 |

Notes:
- 54: NODO DE LA EDT: 3.2. La duración se calcula desde los paquetes subordinados. Cronograma estimado no oficial.
- 55: ORIGEN EDT: docs/edt.md / CÓDIGO EDT: 3.2.1 / DESCRIPCIÓN: Plan de ejecución del periodo del programa, con la EDT, las adquisiciones, los hitos y los recursos por componente. / CRITERIO DE ACEPTACIÓN: PEP aprobado por CEPA y presentado al BID. / RESPONSABLE: Especialista de planificación y monitoreo / REFERENCIA: ROP, PEP / CRONOGRAMA ACADÉMICO PROPUESTO: 35 días hábiles (8 h/día). Las fechas y dependencias son supuestos de planificación, no datos oficiales ni garantías de ejecución. Verificar y reemplazar con PEP/POA/PA y contrataciones.
- 56: ORIGEN EDT: docs/edt.md / CÓDIGO EDT: 3.2.2 / DESCRIPCIÓN: Programación anual de actividades, metas y recursos de cada año de ejecución. / CRITERIO DE ACEPTACIÓN: POA de cada año aprobado antes del periodo que cubre. / RESPONSABLE: Especialista de planificación y monitoreo / REFERENCIA: POA / CRONOGRAMA ACADÉMICO PROPUESTO: 20 días hábiles (8 h/día). Las fechas y dependencias son supuestos de planificación, no datos oficiales ni garantías de ejecución. Verificar y reemplazar con PEP/POA/PA y contrataciones.
- 57: ORIGEN EDT: docs/edt.md / CÓDIGO EDT: 3.2.3 / DESCRIPCIÓN: Plan de adquisiciones del programa y sus actualizaciones, alineado con los contratos del paquete 3.4. / CRITERIO DE ACEPTACIÓN: PA con no objeción del BID y actualizado cuando cambien los procesos. / RESPONSABLE: Especialista de adquisiciones / REFERENCIA: PA / CRONOGRAMA ACADÉMICO PROPUESTO: 35 días hábiles (8 h/día). Las fechas y dependencias son supuestos de planificación, no datos oficiales ni garantías de ejecución. Verificar y reemplazar con PEP/POA/PA y contrataciones.
- 58: NODO DE LA EDT: 3.3. La duración se calcula desde los paquetes subordinados. Cronograma estimado no oficial.
- 59: ORIGEN EDT: docs/edt.md / CÓDIGO EDT: 3.3.1 / DESCRIPCIÓN: Instrumentos con los que CEPA gestiona los riesgos ambientales y sociales del programa, acordados con el BID. / CRITERIO DE ACEPTACIÓN: SGAS y PAAS vigentes e incorporados al ROP. / RESPONSABLE: Especialista socioambiental / REFERENCIA: Condición de desembolso / CRONOGRAMA ACADÉMICO PROPUESTO: 45 días hábiles (8 h/día). Las fechas y dependencias son supuestos de planificación, no datos oficiales ni garantías de ejecución. Verificar y reemplazar con PEP/POA/PA y contrataciones.
- 60: ORIGEN EDT: docs/edt.md / CÓDIGO EDT: 3.3.2 / DESCRIPCIÓN: Protocolo para ejecutar obras en el lado aire sin interrumpir la operación, de uso obligatorio para contratistas y supervisión. / CRITERIO DE ACEPTACIÓN: Protocolo aprobado por la Autoridad de Aviación Civil antes de iniciar obras del lado aire. / RESPONSABLE: Coordinador general de obra / REFERENCIA: Condición de ejecución / CRONOGRAMA ACADÉMICO PROPUESTO: 45 días hábiles (8 h/día). Las fechas y dependencias son supuestos de planificación, no datos oficiales ni garantías de ejecución. Verificar y reemplazar con PEP/POA/PA y contrataciones.
- 61: ORIGEN EDT: docs/edt.md / CÓDIGO EDT: 3.3.3 / DESCRIPCIÓN: Canal de atención a trabajadores, usuarios, arrendatarios, aerolíneas y comunidades del área de influencia. / CRITERIO DE ACEPTACIÓN: Mecanismo instalado, difundido y con registro de casos. / RESPONSABLE: Especialista socioambiental / REFERENCIA: PGAS / CRONOGRAMA ACADÉMICO PROPUESTO: 20 días hábiles (8 h/día). Las fechas y dependencias son supuestos de planificación, no datos oficiales ni garantías de ejecución. Verificar y reemplazar con PEP/POA/PA y contrataciones.
- 62: ORIGEN EDT: docs/edt.md / CÓDIGO EDT: 3.3.4 / DESCRIPCIÓN: Reportes periódicos del cumplimiento ambiental y social exigidos por el préstamo y por el PGAS. / CRITERIO DE ACEPTACIÓN: Informes presentados al BID en los plazos del MEL y del ROP. / RESPONSABLE: Especialista socioambiental / REFERENCIA: MEL / CRONOGRAMA ACADÉMICO PROPUESTO: 700 días hábiles (8 h/día). Las fechas y dependencias son supuestos de planificación, no datos oficiales ni garantías de ejecución. Verificar y reemplazar con PEP/POA/PA y contrataciones.
- 63: NODO DE LA EDT: 3.4. La duración se calcula desde los paquetes subordinados. Cronograma estimado no oficial.
- 64: ORIGEN EDT: docs/edt.md / CÓDIGO EDT: 3.4.1 / DESCRIPCIÓN: Licitación, adjudicación y firma de los contratos de terminal, plataformas y calle Foxtrot, estacionamiento con energía solar, y SSEI. / CRITERIO DE ACEPTACIÓN: Contratos firmados, con garantías verificadas, para los cuatro grupos de obra. / RESPONSABLE: Especialista de adquisiciones / REFERENCIA: P1.1.1 a P1.3.1 / CRONOGRAMA ACADÉMICO PROPUESTO: 130 días hábiles (8 h/día). Las fechas y dependencias son supuestos de planificación, no datos oficiales ni garantías de ejecución. Verificar y reemplazar con PEP/POA/PA y contrataciones.
- 65: ORIGEN EDT: docs/edt.md / CÓDIGO EDT: 3.4.2 / DESCRIPCIÓN: Selección y contrato de la firma que supervisa las obras del Componente I. / CRITERIO DE ACEPTACIÓN: Contrato de supervisión firmado y firma en condiciones de iniciar con las obras. / RESPONSABLE: Especialista de adquisiciones / REFERENCIA: P1.4.1 a P1.4.3 / CRONOGRAMA ACADÉMICO PROPUESTO: 85 días hábiles (8 h/día). Las fechas y dependencias son supuestos de planificación, no datos oficiales ni garantías de ejecución. Verificar y reemplazar con PEP/POA/PA y contrataciones.
- 66: ORIGEN EDT: docs/edt.md / CÓDIGO EDT: 3.4.3 / DESCRIPCIÓN: Selección y contrato de los planes, estudios y capacitaciones del Componente II. / CRITERIO DE ACEPTACIÓN: Contratos firmados para los productos P2.1 a P2.9. / RESPONSABLE: Especialista de adquisiciones / REFERENCIA: P2.1 a P2.9 / CRONOGRAMA ACADÉMICO PROPUESTO: 100 días hábiles (8 h/día). Las fechas y dependencias son supuestos de planificación, no datos oficiales ni garantías de ejecución. Verificar y reemplazar con PEP/POA/PA y contrataciones.
- 67: ORIGEN EDT: docs/edt.md / CÓDIGO EDT: 3.4.4 / DESCRIPCIÓN: Contratos del personal clave de la UEP, de las evaluaciones de medio término y cierre, y de la auditoría externa. / CRITERIO DE ACEPTACIÓN: Contratos firmados y personal o firmas en funciones según el plan de adquisiciones. / RESPONSABLE: Especialista de adquisiciones / REFERENCIA: Administración / CRONOGRAMA ACADÉMICO PROPUESTO: 50 días hábiles (8 h/día). Las fechas y dependencias son supuestos de planificación, no datos oficiales ni garantías de ejecución. Verificar y reemplazar con PEP/POA/PA y contrataciones.
- 68: NODO DE LA EDT: 3.5. La duración se calcula desde los paquetes subordinados. Cronograma estimado no oficial.
- 69: ORIGEN EDT: docs/edt.md / CÓDIGO EDT: 3.5.1 / DESCRIPCIÓN: Solicitudes de desembolso, justificaciones de gasto e informes financieros del programa. / CRITERIO DE ACEPTACIÓN: Desembolsos tramitados y justificaciones aceptadas, sin saldos injustificados al cierre. / RESPONSABLE: Especialista financiero / REFERENCIA: Administración / CRONOGRAMA ACADÉMICO PROPUESTO: 850 días hábiles (8 h/día). Las fechas y dependencias son supuestos de planificación, no datos oficiales ni garantías de ejecución. Verificar y reemplazar con PEP/POA/PA y contrataciones.
- 70: ORIGEN EDT: docs/edt.md / CÓDIGO EDT: 3.5.2 / DESCRIPCIÓN: Auditorías financieras externas de los periodos de ejecución. / CRITERIO DE ACEPTACIÓN: Informes de auditoría entregados al BID por cada periodo exigido. / RESPONSABLE: Especialista financiero / REFERENCIA: Administración / CRONOGRAMA ACADÉMICO PROPUESTO: 830 días hábiles (8 h/día). Las fechas y dependencias son supuestos de planificación, no datos oficiales ni garantías de ejecución. Verificar y reemplazar con PEP/POA/PA y contrataciones.
- 71: ORIGEN EDT: docs/edt.md / CÓDIGO EDT: 3.5.3 / DESCRIPCIÓN: Evaluación intermedia y evaluación final de efectividad, sin atribución empírica, según el plan de monitoreo y evaluación. / CRITERIO DE ACEPTACIÓN: Dos informes de evaluación aceptados. / RESPONSABLE: Especialista de planificación y monitoreo / REFERENCIA: MEL / CRONOGRAMA ACADÉMICO PROPUESTO: 830 días hábiles (8 h/día). Las fechas y dependencias son supuestos de planificación, no datos oficiales ni garantías de ejecución. Verificar y reemplazar con PEP/POA/PA y contrataciones.
- 72: ORIGEN EDT: docs/edt.md / CÓDIGO EDT: 3.5.4 / DESCRIPCIÓN: Informe de terminación, liquidación de contratos, lecciones aprendidas y cierre del programa. / CRITERIO DE ACEPTACIÓN: Informe de terminación presentado y contratos liquidados. / RESPONSABLE: Coordinador del Programa / REFERENCIA: MEL, PCR / CRONOGRAMA ACADÉMICO PROPUESTO: 70 días hábiles (8 h/día). Las fechas y dependencias son supuestos de planificación, no datos oficiales ni garantías de ejecución. Verificar y reemplazar con PEP/POA/PA y contrataciones.
