# Programa de Modernización del AIES ES-L1173

Schedule from MS Project XML, 2026-02-02 to 2030-03-22.

## Calendars

- Lunes a viernes 08:00-17:00: Mon-Fri 08:00-12:00, 13:00-17:00; Sat-Sun off.

## Schedule

| ID | WBS | Task | Duration | Start | Finish | Predecessors | OPS_TaskDurationUnit |
| --- | --- | --- | --- | --- | --- | --- | --- |
| 1 | 1 | **Obras y adecuaciones** | 945d | 2026-04-13 | 2029-11-23 |  | days |
| 2 | 1.1 | **Diseños de las obras aprobados** | 105d | 2026-04-13 | 2026-09-04 |  | days |
| 3 | 1.1.1 | Diseños de la terminal revisados y aprobados | 90d | 2026-04-13 | 2026-08-14 | 50 | days |
| 4 | 1.1.2 | Diseños de plataformas y calle Foxtrot revisados y aprobados | 100d | 2026-04-13 | 2026-08-28 | 50 | days |
| 5 | 1.1.3 | Diseños del estacionamiento y del sistema solar revisados y aprobados | 105d | 2026-04-13 | 2026-09-04 | 50 | days |
| 6 | 1.1.4 | Diseños del SSEI revisados y aprobados | 70d | 2026-04-13 | 2026-07-17 | 50 | days |
| 7 | 1.2 | **Terminal de pasajeros ampliada** | 540d | 2027-06-07 | 2029-06-29 |  | days |
| 8 | 1.2.1 | Estructura y envolvente de la terminal construidas | 330d | 2027-06-07 | 2028-09-08 | 64, 65, 3, 60 | days |
| 9 | 1.2.2 | Salas de espera, circulación y áreas de apoyo terminadas | 240d | 2028-01-03 | 2028-12-01 | 8SS+150d | days |
| 10 | 1.2.3 | Instalaciones eléctricas, hidráulicas, climatización y contra incendio recibidas | 250d | 2028-01-17 | 2028-12-29 | 8SS+160d | days |
| 11 | 1.2.4 | Puentes de abordaje, mobiliario y equipos instalados | 130d | 2029-01-01 | 2029-06-29 | 9, 10 | days |
| 12 | 1.2.5 | Accesibilidad universal, movilidad del cuidado y criterios de sostenibilidad incorporados | 135d | 2028-05-22 | 2028-11-24 | 9SS+100d | days |
| 13 | 1.3 | **Plataformas de contacto y remotas** | 555d | 2027-06-07 | 2029-07-20 |  | days |
| 14 | 1.3.1 | Plataforma de posiciones de contacto construida | 250d | 2027-06-07 | 2028-05-19 | 4, 60, 64, 65 | days |
| 15 | 1.3.2 | Plataforma de posiciones remotas construida | 220d | 2028-04-17 | 2029-02-16 | 26, 4, 60, 64, 65 | days |
| 16 | 1.3.3 | Señalización, luces y torres de iluminación de plataforma instaladas | 110d | 2029-02-19 | 2029-07-20 | 14, 15 | days |
| 17 | 1.4 | **Calle de rodaje Foxtrot** | 290d | 2027-06-07 | 2028-07-14 |  | days |
| 18 | 1.4.1 | Pavimento y hombros de la calle Foxtrot construidos | 220d | 2027-06-07 | 2028-04-07 | 4, 60, 64, 65 | days |
| 19 | 1.4.2 | Señalización y balizamiento de la calle Foxtrot instalados | 70d | 2028-04-10 | 2028-07-14 | 18 | days |
| 20 | 1.5 | **Estacionamiento y energía solar** | 390d | 2027-06-07 | 2028-12-01 |  | days |
| 21 | 1.5.1 | Edificio de estacionamiento construido | 370d | 2027-06-07 | 2028-11-03 | 5, 64, 65 | days |
| 22 | 1.5.2 | Sistemas de acceso, tráfico y áreas de alquiler instalados | 140d | 2028-05-22 | 2028-12-01 | 21SS+250d | days |
| 23 | 1.5.3 | Sistema de generación solar instalado | 160d | 2028-03-06 | 2028-10-13 | 21SS+195d | days |
| 24 | 1.6 | **SSEI reubicado y en operación** | 225d | 2027-06-07 | 2028-04-14 |  | days |
| 25 | 1.6.1 | Edificio del SSEI y vías de acceso construidos | 190d | 2027-06-07 | 2028-02-25 | 6, 60, 64, 65 | days |
| 26 | 1.6.2 | SSEI en funcionamiento en la nueva ubicación | 35d | 2028-02-28 | 2028-04-14 | 25 | days |

Notes:
- 3: Ejecutado por el personal de la UEP, sin costo adicional en la línea base.
- 4: Ejecutado por el personal de la UEP, sin costo adicional en la línea base.
- 5: Ejecutado por el personal de la UEP, sin costo adicional en la línea base.
- 6: Ejecutado por el personal de la UEP, sin costo adicional en la línea base.
- 8: Costo en la línea base: US$ 28.115 millones, de los cuales US$ 1.975 millones son contingencia.
- 9: Costo en la línea base: US$ 8.265 millones, de los cuales US$ 0.461 millones son contingencia.
- 10: Costo en la línea base: US$ 19.149 millones, de los cuales US$ 1.068 millones son contingencia.
- 11: Costo en la línea base: US$ 20.727 millones, de los cuales US$ 1.731 millones son contingencia.
- 12: Costo en la línea base: US$ 0.254 millones, de los cuales US$ 0.014 millones son contingencia.
- 14: Costo en la línea base: US$ 7.277 millones, de los cuales US$ 0.337 millones son contingencia.
- 15: Costo en la línea base: US$ 5.011 millones, de los cuales US$ 0.226 millones son contingencia.
- 16: Costo en la línea base: US$ 1.108 millones, de los cuales US$ 0.149 millones son contingencia.
- 18: Costo en la línea base: US$ 3.086 millones, de los cuales US$ 0.151 millones son contingencia.
- 19: Costo en la línea base: US$ 0.276 millones, de los cuales US$ 0.037 millones son contingencia.
- 21: Costo en la línea base: US$ 33.942 millones, de los cuales US$ 3.121 millones son contingencia.
- 22: Costo en la línea base: US$ 4.024 millones, de los cuales US$ 0.370 millones son contingencia.
- 23: Costo en la línea base: US$ 3.020 millones, de los cuales US$ 0.177 millones son contingencia.
- 25: Costo en la línea base: US$ 5.352 millones, de los cuales US$ 0.720 millones son contingencia.
- 26: Costo en la línea base: US$ 0.282 millones, de los cuales US$ 0.038 millones son contingencia.

| ID | WBS | Task | Duration | Start | Finish | Predecessors | OPS_TaskDurationUnit |
| --- | --- | --- | --- | --- | --- | --- | --- |
| 27 | 1.7 | **Supervisión, PGAS de obra y recepción** | 645d | 2027-06-07 | 2029-11-23 |  | days |
| 28 | 1.7.1 | Supervisión de la terminal y del estacionamiento ejecutada | 540d | 2027-06-07 | 2029-06-29 | 64, 65 | days |
| 29 | 1.7.2 | Supervisión de plataformas, calle Foxtrot y SSEI ejecutada | 555d | 2027-06-07 | 2029-07-20 | 64, 65 | days |
| 30 | 1.7.3 | PGAS de construcción implementado | 555d | 2027-06-07 | 2029-07-20 | 64, 65, 59 | days |
| 31 | 1.7.4 | Planos de obra ejecutada y actas de recepción aprobados | 90d | 2029-07-23 | 2029-11-23 | 8, 11, 12, 16, 19, 21, 22, 23, 26, 28, 29, 30 | days |
| 32 | 2 | **Fortalecimiento institucional** | 760d | 2026-12-21 | 2029-11-16 |  | days |
| 33 | 2.1 | Plan estratégico del sistema aeronáutico aprobado | 150d | 2026-12-21 | 2027-07-16 | 66, 55 | days |
| 34 | 2.2 | **Plan Maestro actualizado y funcionarios capacitados** | 255d | 2027-07-19 | 2028-07-07 |  | days |
| 35 | 2.2.1 | Plan Maestro Aeroportuario actualizado y aprobado | 210d | 2027-07-19 | 2028-05-05 | 66, 33 | days |
| 36 | 2.2.2 | Funcionarios capacitados en planificación, gestión y operación | 45d | 2028-05-08 | 2028-07-07 | 35 | days |
| 37 | 2.3 | **Estrategia y capacitación BIM** | 160d | 2026-12-21 | 2027-07-30 |  | days |
| 38 | 2.3.1 | Estrategia BIM aprobada | 95d | 2026-12-21 | 2027-04-30 | 66 | days |
| 39 | 2.3.2 | Personal de ingeniería capacitado en BIM | 65d | 2027-05-03 | 2027-07-30 | 38 | days |
| 40 | 2.4 | Estudio de conectividad terrestre entregado | 160d | 2026-12-21 | 2027-07-30 | 66 | days |
| 41 | 2.5 | Estudio de diversificación de destinos entregado | 160d | 2026-12-21 | 2027-07-30 | 66 | days |
| 42 | 2.6 | **Auditoría y capacitación EDGE** | 100d | 2029-07-02 | 2029-11-16 |  | days |
| 43 | 2.6.1 | Auditoría para la certificación EDGE realizada | 100d | 2029-07-02 | 2029-11-16 | 11, 12, 21, 23 | days |
| 44 | 2.6.2 | Personal capacitado en certificación EDGE | 50d | 2029-07-02 | 2029-09-07 | 43SS | days |
| 45 | 2.7 | Estudio de separación de flujos entregado | 160d | 2026-12-21 | 2027-07-30 | 66 | days |
| 46 | 2.8 | Estudio de movilidad interna entregado | 135d | 2026-12-21 | 2027-06-25 | 66 | days |
| 47 | 2.9 | Programa de igualdad e inclusión ejecutado | 150d | 2026-12-21 | 2027-07-16 | 66 | days |
| 48 | 3 | **Administración, evaluación y auditorías** | 1080d | 2026-02-02 | 2030-03-22 |  | days |
| 49 | 3.1 | **Condiciones de arranque cumplidas** | 170d | 2026-02-02 | 2026-09-25 |  | days |
| 50 | 3.1.1 | Unidad ejecutora conformada y en funciones | 50d | 2026-02-02 | 2026-04-10 |  | days |
| 51 | 3.1.2 | Reglamento operativo vigente | 35d | 2026-06-15 | 2026-07-31 | 59 | days |
| 52 | 3.1.3 | Convenio de transferencia de recursos vigente | 25d | 2026-08-03 | 2026-09-04 | 51 | days |
| 53 | 3.1.4 | Cuenta especial aperturada | 15d | 2026-09-07 | 2026-09-25 | 52 | days |

Notes:
- 28: Costo en la línea base: US$ 3.658 millones, de los cuales US$ 0.288 millones son contingencia. Tarea de nivel de esfuerzo: su duración se fijó para terminar con el fin de 1.2.4, 1.2.5, 1.5.2, 1.5.3.
- 29: Costo en la línea base: US$ 0.699 millones, de los cuales US$ 0.055 millones son contingencia. Tarea de nivel de esfuerzo: su duración se fijó para terminar con el fin de 1.3.3, 1.4.2, 1.6.2.
- 30: Costo en la línea base: US$ 1.252 millones, de los cuales US$ 0.172 millones son contingencia. Tarea de nivel de esfuerzo: su duración se fijó para terminar con el fin de las obras.
- 31: Costo en la línea base: US$ 0.089 millones, de los cuales US$ 0.007 millones son contingencia.
- 33: Costo en la línea base: US$ 0.866 millones, de los cuales US$ 0.170 millones son contingencia.
- 35: Costo en la línea base: US$ 1.509 millones, de los cuales US$ 0.217 millones son contingencia.
- 36: Costo en la línea base: US$ 0.034 millones, de los cuales US$ 0.004 millones son contingencia.
- 38: Costo en la línea base: US$ 0.204 millones, de los cuales US$ 0.023 millones son contingencia.
- 39: Costo en la línea base: US$ 0.087 millones, de los cuales US$ 0.010 millones son contingencia.
- 40: Costo en la línea base: US$ 0.255 millones, de los cuales US$ 0.034 millones son contingencia.
- 41: Costo en la línea base: US$ 0.190 millones, de los cuales US$ 0.014 millones son contingencia.
- 43: Costo en la línea base: US$ 0.021 millones, de los cuales US$ 0.002 millones son contingencia.
- 44: Costo en la línea base: US$ 0.004 millones, de los cuales US$ 0.000 millones son contingencia.
- 45: Costo en la línea base: US$ 0.184 millones, de los cuales US$ 0.025 millones son contingencia.
- 46: Costo en la línea base: US$ 0.184 millones, de los cuales US$ 0.025 millones son contingencia.
- 47: Costo en la línea base: US$ 0.038 millones, de los cuales US$ 0.005 millones son contingencia.
- 50: Costo en la línea base: US$ 2.343 millones, de los cuales US$ 0.112 millones son contingencia.
- 51: Ejecutado por el personal de la UEP, sin costo adicional en la línea base.
- 52: Ejecutado por el personal de la UEP, sin costo adicional en la línea base.
- 53: Ejecutado por el personal de la UEP, sin costo adicional en la línea base.

| ID | WBS | Task | Type | Duration | Start | Finish | Predecessors | OPS_TaskDurationUnit | OPS_MilestoneKind |
| --- | --- | --- | --- | --- | --- | --- | --- | --- | --- |
| 54 | 3.2 | **Planes de ejecución aprobados** |  | 945d | 2026-04-13 | 2029-11-23 |  | days |  |
| 55 | 3.2.1 | Plan de ejecución plurianual aprobado |  | 35d | 2026-04-13 | 2026-05-29 | 50 | days |  |
| 56 | 3.2.2 | Planes operativos anuales aprobados |  | 910d | 2026-06-01 | 2029-11-23 | 55 | days |  |
| 57 | 3.2.3 | Plan de adquisiciones aprobado |  | 35d | 2026-06-01 | 2026-07-17 | 55 | days |  |
| 58 | 3.3 | **Condiciones socioambientales y de seguridad operacional** |  | 855d | 2026-04-13 | 2029-07-20 |  | days |  |
| 59 | 3.3.1 | Sistema de gestión ambiental y social y plan de acción vigentes |  | 45d | 2026-04-13 | 2026-06-12 | 50 | days |  |
| 60 | 3.3.2 | Protocolo de seguridad operacional aprobado por la AAC |  | 45d | 2026-08-31 | 2026-10-30 | 4, 59 | days |  |
| 61 | 3.3.3 | Mecanismo de quejas y reclamos en operación |  | 810d | 2026-06-15 | 2029-07-20 | 59 | days |  |
| 62 | 3.3.4 | Informes de cumplimiento socioambiental presentados |  | 555d | 2027-06-07 | 2029-07-20 | 64, 65, 59 | days |  |
| 63 | 3.4 | **Contratos del programa firmados** |  | 815d | 2026-04-13 | 2029-05-25 |  | days |  |
| 64 | 3.4.1 | Contratos de obras del Componente I firmados |  | 195d | 2026-09-07 | 2027-06-04 | 3, 4, 5, 6, 57, 51 | days |  |
| 65 | 3.4.2 | Contrato de supervisión firmado |  | 85d | 2026-08-03 | 2026-11-27 | 57, 59, 51 | days |  |
| 66 | 3.4.3 | Contratos de consultorías del Componente II firmados |  | 100d | 2026-08-03 | 2026-12-18 | 57, 51 | days |  |
| 67 | 3.4.4 | Contratos de la unidad ejecutora, evaluación y auditoría firmados |  | 815d | 2026-04-13 | 2029-05-25 | 50 | days |  |
| 68 | 3.5 | **Control financiero, evaluación y cierre** |  | 910d | 2026-09-28 | 2030-03-22 |  | days |  |
| 69 | 3.5.1 | Desembolsos justificados e informes financieros presentados |  | 825d | 2026-09-28 | 2029-11-23 | 53 | days |  |
| 70 | 3.5.2 | Auditorías externas emitidas |  | 825d | 2026-09-28 | 2029-11-23 | 53 | days |  |
| 71 | 3.5.3 | Evaluaciones de medio término y de cierre realizadas |  | 560d | 2027-06-07 | 2029-07-27 | 64 | days |  |
| 72 | 3.5.4 | Informe de terminación y cierre administrativo del programa |  | 85d | 2029-11-26 | 2030-03-22 | 31, 36, 39, 40, 41, 43, 44, 45, 46, 47, 61, 62, 67 | days |  |
| 73 | H | **Hitos del programa** |  | 1031d | 2026-04-10 | 2030-03-22 |  | days |  |
| 74 | H.1 | Unidad Ejecutora conformada | milestone | 0d | 2026-04-10 | 2026-04-10 | 50 | days | FINISH |
| 75 | H.2 | Condiciones previas al primer desembolso cumplidas (ROP, convenio, cuenta) | milestone | 0d | 2026-09-25 | 2026-09-25 | 53 | days | FINISH |
| 76 | H.3 | Contratos de obra y de supervisión firmados | milestone | 0d | 2027-06-04 | 2027-06-04 | 64, 65 | days | FINISH |
| 77 | H.4 | Protocolo de seguridad operacional aprobado por la AAC | milestone | 0d | 2026-10-30 | 2026-10-30 | 60 | days | FINISH |
| 78 | H.5 | SSEI reubicado y en funcionamiento | milestone | 0d | 2028-04-14 | 2028-04-14 | 26 | days | FINISH |
| 79 | H.6 | Plataforma de posiciones remotas concluida | milestone | 0d | 2029-02-16 | 2029-02-16 | 15 | days | FINISH |
| 80 | H.7 | Terminal ampliada concluida y equipada | milestone | 0d | 2029-06-29 | 2029-06-29 | 11, 12 | days | FINISH |
| 81 | H.8 | Estacionamiento con sistema solar concluido | milestone | 0d | 2028-12-01 | 2028-12-01 | 22, 23 | days | FINISH |
| 82 | H.9 | Obras recibidas (planos de obra ejecutada y actas aprobados) | milestone | 0d | 2029-11-23 | 2029-11-23 | 31 | days | FINISH |
| 83 | H.10 | Cierre administrativo del programa | milestone | 0d | 2030-03-22 | 2030-03-22 | 72, 56, 69, 70, 71 | days | FINISH |

Notes:
- 55: Ejecutado por el personal de la UEP, sin costo adicional en la línea base.
- 56: Ejecutado por el personal de la UEP, sin costo adicional en la línea base. Tarea de nivel de esfuerzo: su duración se fijó para terminar con el fin de 1.7.4.
- 57: Ejecutado por el personal de la UEP, sin costo adicional en la línea base.
- 59: Ejecutado por el personal de la UEP, sin costo adicional en la línea base.
- 60: Ejecutado por el personal de la UEP, sin costo adicional en la línea base.
- 61: Ejecutado por el personal de la UEP, sin costo adicional en la línea base. Tarea de nivel de esfuerzo: su duración se fijó para terminar con el fin de las obras.
- 62: Ejecutado por el personal de la UEP, sin costo adicional en la línea base. Tarea de nivel de esfuerzo: su duración se fijó para terminar con el fin de las obras.
- 64: Ejecutado por el personal de la UEP, sin costo adicional en la línea base.
- 65: Ejecutado por el personal de la UEP, sin costo adicional en la línea base.
- 66: Ejecutado por el personal de la UEP, sin costo adicional en la línea base.
- 67: Ejecutado por el personal de la UEP, sin costo adicional en la línea base. Tarea de nivel de esfuerzo: su duración se fijó para terminar con la firma del contrato de la evaluación final.
- 69: Ejecutado por el personal de la UEP, sin costo adicional en la línea base. Tarea de nivel de esfuerzo: su duración se fijó para terminar con el fin de 1.7.4.
- 70: Costo en la línea base: US$ 0.178 millones, de los cuales US$ 0.013 millones son contingencia. Tarea de nivel de esfuerzo: su duración se fijó para terminar con el fin de 1.7.4.
- 71: Costo en la línea base: US$ 0.160 millones, de los cuales US$ 0.008 millones son contingencia. Tarea de nivel de esfuerzo: su duración se fijó para terminar con el informe de la evaluación final.
- 72: Costo en la línea base: US$ 0.059 millones, de los cuales US$ 0.004 millones son contingencia.
