code,name,package,phase,owner,dur,deps,start,finish,float,critical
1.1.1-01,"Revisar técnicamente el expediente de diseño de la terminal (planos, especificaciones y cantidades)",1.1.1,Planificación,Especialista técnico,31,3.1.1-05,2026-05-18,2026-06-29,41,
1.1.1-02,"Ajustar los diseños y el presupuesto de la terminal con la firma diseñadora (FIDS, CUTE, puentes de abordaje y observaciones de la revisión)",1.1.1,Planificación,Firma consultora,32,1.1.1-01,2026-06-30,2026-08-12,41,
1.1.1-03,Revisar la coordinación del modelo BIM de la terminal con los planos y las especificaciones,1.1.1,Planificación,Especialista técnico,16,"1.1.1-01:II+10,1.1.1-02:FF+0",2026-07-22,2026-08-12,57,
1.1.1-04,Aprobar el expediente de diseño de la terminal,1.1.1,Planificación,CEPA,11,"1.1.1-02,1.1.1-03,1.2.5-01,1.2.5-02",2026-09-04,2026-09-18,41,
1.1.1-05,Emitir la no objeción del BID a las especificaciones técnicas y los planos de la licitación de la terminal,1.1.1,Planificación,BID,6,1.1.1-04,2026-09-21,2026-09-28,41,
1.1.2-01,Realizar sondeos geotécnicos en las tres posiciones remotas y verificar el diseño de pavimentos,1.1.2,Planificación,Firma consultora,32,3.1.1-05,2026-05-18,2026-06-30,134,
1.1.2-02,"Revisar técnicamente los diseños de plataformas, calle Foxtrot, drenaje y ayudas visuales",1.1.2,Planificación,Especialista técnico,31,"1.1.1-01,3.1.1-05",2026-06-30,2026-08-11,82,
1.1.2-03,Revisar con la AAC la geometría del lado aire y el plan de fases de las obras,1.1.2,Planificación,AAC,22,1.1.2-02,2026-08-12,2026-09-10,82,
1.1.2-04,Ajustar los diseños y el presupuesto de plataformas y calle Foxtrot con la firma diseñadora,1.1.2,Planificación,Firma consultora,26,"1.1.2-01,1.1.2-03",2026-09-11,2026-10-16,82,
1.1.2-05,Aprobar los diseños de plataformas y calle Foxtrot,1.1.2,Planificación,CEPA,11,1.1.2-04,2026-10-19,2026-11-02,82,
1.1.2-06,Emitir la no objeción del BID a las especificaciones técnicas y los planos de la licitación de plataformas y Foxtrot,1.1.2,Planificación,BID,6,1.1.2-05,2026-11-03,2026-11-10,82,
1.1.3-01,"Revisar técnicamente el expediente de diseño del estacionamiento (estructura, circulaciones y accesibilidad universal)",1.1.3,Planificación,Especialista técnico,32,3.1.1-05,2026-05-18,2026-06-30,161,
1.1.3-02,Revisar el diseño del sistema fotovoltaico y su conexión eléctrica,1.1.3,Planificación,Especialista técnico,13,1.1.3-01:II+10,2026-06-01,2026-06-17,201,
1.1.3-03,Ajustar los diseños y el presupuesto del estacionamiento con la firma diseñadora,1.1.3,Planificación,Firma consultora,22,"1.1.3-01,1.1.3-02",2026-07-01,2026-07-30,192,
1.1.3-04,Aprobar el expediente de diseño del estacionamiento,1.1.3,Planificación,CEPA,11,1.1.3-03,2026-07-31,2026-08-14,192,
1.1.3-05,Emitir la no objeción del BID a las especificaciones técnicas y los planos de la licitación del estacionamiento,1.1.3,Planificación,BID,6,1.1.3-04,2026-08-17,2026-08-24,192,
1.1.4-01,Revisar técnicamente el diseño del edificio del SSEI y de sus vías de acceso,1.1.4,Planificación,Especialista técnico,21,"1.1.3-01,3.1.1-05",2026-07-01,2026-07-29,161,
1.1.4-02,"Validar con el SSEI y la AAC el emplazamiento, los tiempos de respuesta y la continuidad del servicio",1.1.4,Planificación,AAC,16,1.1.4-01,2026-07-30,2026-08-20,161,
1.1.4-03,Ajustar el diseño del SSEI con la firma diseñadora,1.1.4,Planificación,Firma consultora,16,1.1.4-02,2026-08-21,2026-09-11,161,
1.1.4-04,Aprobar el diseño del SSEI,1.1.4,Planificación,CEPA,11,1.1.4-03,2026-09-14,2026-09-28,161,
1.1.4-05,Emitir la no objeción del BID a las especificaciones técnicas y los planos de la licitación del SSEI,1.1.4,Planificación,BID,6,1.1.4-04,2026-09-29,2026-10-06,161,
1.2.1-01,"Movilizar al contratista e instalar cerramientos, accesos y obras provisionales con la terminal en operación",1.2.1,Ejecución,Contratista de obra,31,"1.1.1-05,1.7.1-01:II+5,1.7.3-02,3.3.2-04,3.4.1-12:FI+10,3.4.2-12,3.3.1-06",2027-05-27,2027-07-08,32,
1.2.1-02,"Ejecutar la demolición, el movimiento de tierra y la cimentación de la terminal",1.2.1,Ejecución,Contratista de obra,78,1.2.1-01,2027-07-09,2027-10-26,32,
1.2.1-03,Construir la estructura de concreto de los niveles 1 a 3 de la terminal,1.2.1,Ejecución,Contratista de obra,133,1.2.1-02:II+40,2027-09-03,2028-03-07,32,
1.2.1-04,Montar la estructura metálica y la cubierta de la terminal,1.2.1,Ejecución,Contratista de obra,77,1.2.1-03:II+95,2028-01-14,2028-05-01,32,
1.2.1-05,Instalar las fachadas de vidrio y los cerramientos exteriores de la terminal,1.2.1,Ejecución,Contratista de obra,82,1.2.1-04:II+30,2028-02-25,2028-06-19,62,
1.2.2-01,"Construir las divisiones, la mampostería liviana y los cielos de los tres niveles",1.2.2,Ejecución,Contratista de obra,96,1.2.1-04:II+40,2028-03-10,2028-07-21,32,
1.2.2-02,"Aplicar los acabados de pisos y paredes de las seis salas de espera, los pasillos, los locales y el salón VIP",1.2.2,Ejecución,Contratista de obra,107,"1.2.1-05:II+30,1.2.2-01:II+50",2028-05-19,2028-10-16,32,
1.2.2-03,Integrar la ampliación con la terminal de la Etapa 1 y habilitar las circulaciones de pasajeros,1.2.2,Ejecución,Contratista de obra,46,1.2.2-02:FF+5,2028-08-21,2028-10-23,83,
1.2.3-01,"Instalar las redes eléctricas, de agua, de drenaje y los ductos de climatización por nivel",1.2.3,Ejecución,Contratista de obra,116,"1.2.1-03:II+60,1.2.2-01:FF+10",2028-02-25,2028-08-04,50,
1.2.3-02,"Instalar la subestación, los tableros, la planta de emergencia y los equipos de climatización",1.2.3,Ejecución,Contratista de obra,78,"1.2.1-04,1.2.3-01:II+40",2028-05-02,2028-08-17,47,
1.2.3-03,"Instalar la detección y supresión de incendios, la voz y datos y el control de acceso",1.2.3,Ejecución,Contratista de obra,72,"1.2.2-01:FF+20,1.2.3-01:II+50",2028-05-11,2028-08-18,46,
1.2.3-04,"Realizar las pruebas, el balanceo y la puesta en marcha de las instalaciones de la terminal",1.2.3,Ejecución,Contratista de obra,52,"1.2.2-02:II+80,1.2.3-02,1.2.3-03",2028-09-08,2028-11-20,32,
1.2.4-01,Elaborar y aprobar los planos de taller de los seis puentes de abordaje,1.2.4,Ejecución,Contratista de obra,42,1.2.1-01:FI+30,2027-08-20,2027-10-18,133,
1.2.4-02,Fabricar y entregar en sitio los seis puentes de abordaje,1.2.4,Ejecución,Contratista de obra,132,1.2.4-01,2027-10-19,2028-04-19,133,
1.2.4-03,Instalar y conectar los seis puentes de abordaje a la terminal y a la plataforma,1.2.4,Ejecución,Contratista de obra,52,"1.2.1-05,1.2.4-02,1.3.1-05",2028-10-24,2029-01-03,0,si
1.2.4-04,"Instalar el mobiliario, los escáneres de seguridad y los sistemas de información de vuelo",1.2.4,Ejecución,Contratista de obra,37,1.2.2-02:FF+25,2028-09-29,2028-11-20,32,
1.2.4-05,"Probar los equipos, capacitar al personal de CEPA y entregar los manuales",1.2.4,Ejecución,Contratista de obra,31,"1.2.3-04,1.2.4-03,1.2.4-04",2029-01-04,2029-02-15,0,si
1.2.4-06,Realizar las pruebas integradas de operación de la terminal con las aerolíneas y las autoridades,1.2.4,Ejecución,CEPA,21,"1.2.2-03,1.2.4-05,1.2.5-03,1.2.5-04,1.3.1-06",2029-02-16,2029-03-16,0,si
1.2.5-01,Verificar en los planos aprobados los recorridos de accesibilidad universal y de movilidad del cuidado,1.2.5,Planificación,Especialista socioambiental,16,1.1.1-02,2026-08-13,2026-09-03,41,
1.2.5-02,"Verificar en el diseño aprobado las metas EDGE Advanced de energía, agua y carbono incorporado",1.2.5,Planificación,Especialista socioambiental,16,1.1.1-02,2026-08-13,2026-09-03,41,
1.2.5-03,Verificar en obra la ejecución de los recorridos accesibles y de los espacios de movilidad del cuidado,1.2.5,Ejecución,Especialista socioambiental,21,"1.2.2-01:II+30,1.2.2-02:FF+10",2028-10-02,2028-10-30,78,
1.2.5-04,Verificar en obra las medidas de eficiencia y reunir las evidencias para la auditoría EDGE,1.2.5,Ejecución,Especialista socioambiental,19,"1.2.3-02,1.2.3-04:FF+5",2028-11-01,2028-11-27,58,
1.3.1-01,Movilizar al contratista de plataformas y Foxtrot e instalar el cerramiento y los accesos del lado aire,1.3.1,Ejecución,Contratista de obra,31,"1.1.2-06,1.7.2-01:II+5,1.7.3-04,3.3.2-04,3.4.1-24:FI+10,3.4.2-24,3.3.1-06",2027-08-11,2027-09-22,0,si
1.3.1-02,"Construir la terracería, el drenaje y la base de la fase 1 de la plataforma de contacto",1.3.1,Ejecución,Contratista de obra,52,1.3.1-01,2027-09-23,2027-12-03,0,si
1.3.1-03,Colar el pavimento de concreto de la fase 1 de la plataforma de contacto y sellar las juntas,1.3.1,Ejecución,Contratista de obra,87,1.3.1-02,2027-12-06,2028-04-04,0,si
1.3.1-04,"Construir la terracería, el drenaje y la base de la fase 2 de la plataforma de contacto",1.3.1,Ejecución,Contratista de obra,52,1.3.1-03:FI+5,2028-04-12,2028-06-22,0,si
1.3.1-05,Colar el pavimento de concreto de la fase 2 de la plataforma de contacto y sellar las juntas,1.3.1,Ejecución,Contratista de obra,87,1.3.1-04,2028-06-23,2028-10-23,0,si
1.3.1-06,Instalar los ductos y los servicios de apoyo a aeronaves de la plataforma de contacto,1.3.1,Ejecución,Contratista de obra,26,1.3.1-05:FF+5,2028-09-25,2028-10-30,78,
1.3.2-01,Demoler el SSEI antiguo y despejar la huella de la plataforma remota,1.3.2,Ejecución,Contratista de obra,21,"1.3.1-01,1.6.2-04",2028-02-16,2028-03-15,187,
1.3.2-02,Ejecutar la terracería y la capa de suelo cemento de 30 cm de la plataforma remota,1.3.2,Ejecución,Contratista de obra,42,1.3.2-01,2028-03-16,2028-05-12,187,
1.3.2-03,Modificar los canales existentes y construir el drenaje y las obras de paso de la plataforma remota,1.3.2,Ejecución,Contratista de obra,31,1.3.2-02:II+20,2028-04-13,2028-05-25,187,
1.3.2-04,Colar el pavimento de concreto de 34 cm de la plataforma remota y sellar las juntas,1.3.2,Ejecución,Contratista de obra,58,"1.3.2-02,1.3.2-03",2028-05-26,2028-08-15,187,
1.3.2-05,Construir el pavimento asfáltico de los márgenes y las zonas de apoyo terrestre de la plataforma remota,1.3.2,Ejecución,Contratista de obra,26,1.3.2-04:FF+5,2028-07-18,2028-08-22,187,
1.3.3-01,"Instalar los ductos, las torres de iluminación y las luces de la plataforma de contacto",1.3.3,Ejecución,Contratista de obra,41,1.3.1-05:FF+20,2028-09-25,2028-11-20,136,
1.3.3-02,Instalar las luces de borde y las torres de iluminación de la plataforma remota,1.3.3,Ejecución,Contratista de obra,36,1.3.2-04:FF+10,2028-07-11,2028-08-29,195,
1.3.3-03,Pintar la señalización horizontal de las plataformas nuevas,1.3.3,Ejecución,Contratista de obra,13,"1.3.1-05:FI+25,1.3.2-05",2028-11-28,2028-12-14,118,
1.3.3-04,Probar las luces y la señalización de las plataformas nuevas,1.3.3,Ejecución,Contratista de obra,11,"1.3.3-01,1.3.3-02,1.3.3-03",2028-12-15,2028-12-29,118,
1.3.3-05,Autorizar la puesta en servicio de las plataformas nuevas,1.3.3,Ejecución,AAC,12,1.3.3-04,2029-01-01,2029-01-16,118,
1.4.1-01,"Ejecutar la terracería, la base granular y el drenaje de la calle Foxtrot",1.4.1,Ejecución,Contratista de obra,52,"1.3.1-01,1.3.1-03",2028-04-05,2028-06-15,189,
1.4.1-02,Pavimentar con concreto asfáltico la calle Foxtrot y los hombros,1.4.1,Ejecución,Contratista de obra,31,1.4.1-01,2028-06-16,2028-07-28,189,
1.4.1-03,Construir la intersección de Foxtrot con la calle de rodaje Alfa en ventanas de cierre nocturnas,1.4.1,Ejecución,Contratista de obra,32,1.4.1-02:II+20,2028-07-14,2028-08-28,189,
1.4.2-01,"Instalar los ductos, el cableado y las luces de borde y de los puntos de espera de la calle Foxtrot",1.4.2,Ejecución,Contratista de obra,31,"1.4.1-02:II+10,1.4.1-03",2028-08-29,2028-10-10,189,
1.4.2-02,Pintar la señalización horizontal de la calle Foxtrot,1.4.2,Ejecución,Contratista de obra,10,1.4.1-03,2028-08-29,2028-09-11,210,
1.4.2-03,Probar el balizamiento y la iluminación de la calle Foxtrot,1.4.2,Ejecución,Contratista de obra,11,"1.4.2-01,1.4.2-02",2028-10-11,2028-10-25,189,
1.4.2-04,Autorizar la puesta en servicio de la calle Foxtrot,1.4.2,Ejecución,AAC,12,1.4.2-03,2028-10-26,2028-11-10,189,
1.5.1-01,Movilizar al contratista e instalar los cerramientos y las obras provisionales del sitio del estacionamiento,1.5.1,Ejecución,Contratista de obra,31,"1.1.3-05,1.7.1-03:II+5,1.7.3-01,3.4.1-06:FI+10,3.4.2-06,3.3.1-06",2027-02-16,2027-03-30,221,
1.5.1-02,Construir la cimentación del edificio de estacionamiento,1.5.1,Ejecución,Contratista de obra,72,1.5.1-01,2027-03-31,2027-07-08,303,
1.5.1-03,Construir la estructura de los niveles 1 y 2 del estacionamiento,1.5.1,Ejecución,Contratista de obra,127,1.5.1-02:II+30,2027-05-12,2027-11-04,303,
1.5.1-04,"Construir la estructura del nivel superior, la cubierta y las rampas del estacionamiento",1.5.1,Ejecución,Contratista de obra,68,1.5.1-03:II+85,2027-09-08,2027-12-10,303,
1.5.1-05,"Instalar las redes eléctricas, de iluminación, de drenaje y de protección contra incendios del estacionamiento",1.5.1,Ejecución,Contratista de obra,111,"1.5.1-03:II+55,1.5.1-04:FF+15",2027-07-30,2027-12-31,355,
1.5.1-06,"Construir los acabados, los ascensores, las rutas accesibles y la señalización vial del estacionamiento",1.5.1,Ejecución,Contratista de obra,105,"1.5.1-04:II+45,1.5.1-05:FF+15",2027-11-10,2028-04-04,303,
1.5.2-01,"Instalar el control de acceso, las barreras, el cobro y la guía de plazas del estacionamiento",1.5.2,Ejecución,Contratista de obra,52,1.5.1-06:II+15,2027-12-01,2028-02-10,336,
1.5.2-02,Habilitar las áreas de alquiler de vehículos y la gestión del tráfico interno,1.5.2,Ejecución,Contratista de obra,41,1.5.1-06:II+10,2027-11-24,2028-01-19,352,
1.5.2-03,Probar los sistemas de acceso y tráfico y capacitar al personal de operación,1.5.2,Ejecución,Contratista de obra,20,"1.5.2-01,1.5.2-02",2028-02-11,2028-03-09,336,
1.5.3-01,Tramitar la autorización de interconexión del sistema solar con la red de distribución,1.5.3,Ejecución,CEPA,38,1.5.1-01:II+60,2027-05-11,2027-07-01,516,
1.5.3-02,Instalar las estructuras de soporte y los paneles fotovoltaicos en la cubierta del estacionamiento,1.5.3,Ejecución,Contratista de obra,46,"1.5.1-04:II+50,1.5.1-06:FF+5",2028-02-08,2028-04-11,303,
1.5.3-03,"Instalar los inversores, el cableado, los tableros y los medidores del sistema solar",1.5.3,Ejecución,Contratista de obra,31,1.5.3-02:FF+10,2028-03-14,2028-04-25,303,
1.5.3-04,Probar y energizar el sistema solar y entregar el estacionamiento con sus manuales,1.5.3,Ejecución,Contratista de obra,26,"1.5.1-06,1.5.2-03,1.5.3-01,1.5.3-03",2028-04-26,2028-05-31,303,
1.6.1-01,Movilizar al contratista e instalar los cerramientos y los accesos del sitio del SSEI,1.6.1,Ejecución,Contratista de obra,20,"1.1.4-05,1.7.2-03:II+5,1.7.3-03,3.3.2-04,3.4.1-18:FI+10,3.4.2-18,3.3.1-06",2027-06-18,2027-07-15,187,
1.6.1-02,Construir la cimentación y la estructura del edificio del SSEI,1.6.1,Ejecución,Contratista de obra,51,1.6.1-01,2027-07-16,2027-09-24,187,
1.6.1-03,"Construir la cubierta, los cerramientos y las instalaciones del edificio del SSEI",1.6.1,Ejecución,Contratista de obra,56,1.6.1-02:II+30,2027-08-27,2027-11-12,187,
1.6.1-04,Construir las vías de acceso y de salida a la plataforma del SSEI,1.6.1,Ejecución,Contratista de obra,41,1.6.1-02:II+20,2027-08-13,2027-10-08,202,
1.6.1-05,"Instalar los acabados, los sistemas de alarma y comunicaciones y probar el edificio del SSEI",1.6.1,Ejecución,Contratista de obra,41,"1.6.1-03:FI-10,1.6.1-04",2027-11-01,2027-12-27,187,
1.6.2-01,Preparar el plan de traslado y de cobertura del servicio durante el traslado del SSEI,1.6.2,Planificación,CEPA,21,1.6.1-03:II+0,2027-08-27,2027-09-24,251,
1.6.2-02,Dar la conformidad a la cobertura de protección contra incendios durante el traslado del SSEI,1.6.2,Ejecución,AAC,11,1.6.2-01,2027-09-27,2027-10-11,251,
1.6.2-03,Equipar el edificio nuevo y trasladar al personal y los vehículos del SSEI,1.6.2,Ejecución,CEPA,16,"1.6.2-02,1.7.4-04",2028-01-10,2028-01-31,187,
1.6.2-04,Realizar las pruebas de tiempo de respuesta y declarar en operación el SSEI nuevo,1.6.2,Ejecución,CEPA,11,1.6.2-03,2028-02-01,2028-02-15,187,
1.7.1-01,Movilizar a la firma de supervisión de la terminal,1.7.1,Ejecución,Firma de supervisión,11,3.4.2-12,2027-05-20,2027-06-03,32,
1.7.1-02,Supervisar la construcción de la terminal,1.7.1,Monitoreo y control,Firma de supervisión,487,1.7.1-01,2027-06-04,2029-04-16,240,
1.7.1-03,Movilizar a la firma de supervisión del estacionamiento,1.7.1,Ejecución,Firma de supervisión,11,3.4.2-06,2027-02-04,2027-02-18,224,
1.7.1-04,Supervisar la construcción del estacionamiento y del sistema solar,1.7.1,Monitoreo y control,Firma de supervisión,347,1.7.1-03,2027-02-19,2028-06-19,455,
1.7.1-05,Presentar el informe final de supervisión de la terminal,1.7.1,Cierre,Firma de supervisión,16,1.7.4-05,2029-07-06,2029-07-27,166,
1.7.1-06,Presentar el informe final de supervisión del estacionamiento,1.7.1,Cierre,Firma de supervisión,16,1.7.4-06,2028-08-17,2028-09-07,397,
1.7.2-01,Movilizar a la firma de supervisión de plataformas y calle Foxtrot,1.7.2,Ejecución,Firma de supervisión,11,3.4.2-24,2027-07-29,2027-08-12,4,
1.7.2-02,Supervisar la construcción de plataformas y de la calle Foxtrot,1.7.2,Monitoreo y control,Firma de supervisión,386,1.7.2-01,2027-08-13,2029-02-02,291,
1.7.2-03,Movilizar a la firma de supervisión del SSEI,1.7.2,Ejecución,Firma de supervisión,9,3.4.2-18,2027-06-11,2027-06-23,187,
1.7.2-04,Supervisar la construcción del edificio del SSEI,1.7.2,Monitoreo y control,Firma de supervisión,142,1.7.2-03,2027-06-24,2028-01-07,571,
1.7.2-05,Presentar el informe final de supervisión de plataformas y calle Foxtrot,1.7.2,Cierre,Firma de supervisión,16,1.7.4-07,2029-04-04,2029-04-25,233,
1.7.2-06,Presentar el informe final de supervisión del SSEI,1.7.2,Cierre,Firma de supervisión,13,1.7.4-08,2028-02-22,2028-03-09,527,
1.7.3-01,Revisar y aprobar el PGAS de construcción del contratista del estacionamiento,1.7.3,Monitoreo y control,Especialista socioambiental,13,"3.3.1-04,3.4.1-06",2027-01-28,2027-02-15,221,
1.7.3-02,Revisar y aprobar el PGAS de construcción del contratista de la terminal,1.7.3,Monitoreo y control,Especialista socioambiental,16,"3.3.1-04,3.4.1-12",2027-04-26,2027-05-17,39,
1.7.3-03,Revisar y aprobar el PGAS de construcción del contratista del SSEI,1.7.3,Monitoreo y control,Especialista socioambiental,9,"3.3.1-04,3.4.1-18",2027-05-28,2027-06-09,193,
1.7.3-04,Revisar y aprobar el PGAS de construcción del contratista de plataformas y Foxtrot,1.7.3,Monitoreo y control,Especialista socioambiental,13,"3.3.1-04,3.4.1-24",2027-07-23,2027-08-10,0,si
1.7.3-05,Dar seguimiento al cumplimiento del PGAS durante las obras,1.7.3,Monitoreo y control,Especialista socioambiental,565,1.7.3-01,2027-02-16,2029-04-16,240,
1.7.3-06,Verificar el cierre de las instalaciones temporales y la restauración de los sitios de obra,1.7.3,Cierre,Especialista socioambiental,16,"1.7.4-01,1.7.4-02,1.7.4-03,1.7.4-04",2029-04-17,2029-05-08,224,
1.7.4-01,Realizar la recepción provisional de la terminal y levantar la lista de pendientes,1.7.4,Cierre,Coordinador general de obra,21,"1.2.4-06,1.3.3-05",2029-03-19,2029-04-16,75,
1.7.4-02,Realizar la recepción provisional del estacionamiento y del sistema solar y levantar la lista de pendientes,1.7.4,Cierre,Coordinador general de obra,13,1.5.3-04,2028-06-01,2028-06-19,306,
1.7.4-03,Realizar la recepción provisional de las plataformas y de la calle Foxtrot y levantar la lista de pendientes,1.7.4,Cierre,Coordinador general de obra,13,"1.3.3-05,1.4.2-04",2029-01-17,2029-02-02,142,
1.7.4-04,Realizar la recepción provisional del edificio del SSEI y levantar la lista de pendientes,1.7.4,Cierre,Coordinador general de obra,9,1.6.1-05,2027-12-28,2028-01-07,187,
1.7.4-05,"Verificar la subsanación de pendientes, recibir los planos de obra ejecutada y firmar el acta de recepción definitiva de la terminal",1.7.4,Cierre,Coordinador general de obra,58,1.7.4-01,2029-04-17,2029-07-05,75,
1.7.4-06,"Verificar la subsanación de pendientes, recibir los planos de obra ejecutada y firmar el acta de recepción definitiva del estacionamiento y el sistema solar",1.7.4,Cierre,Coordinador general de obra,42,1.7.4-02,2028-06-20,2028-08-16,306,
1.7.4-07,"Verificar la subsanación de pendientes, recibir los planos de obra ejecutada y firmar el acta de recepción definitiva de las plataformas y la calle Foxtrot",1.7.4,Cierre,Coordinador general de obra,42,1.7.4-03,2029-02-05,2029-04-03,142,
1.7.4-08,"Verificar la subsanación de pendientes, recibir los planos de obra ejecutada y firmar el acta de recepción definitiva del edificio del SSEI",1.7.4,Cierre,Coordinador general de obra,31,1.7.4-04,2028-01-10,2028-02-21,433,
2.1-01,Elaborar el plan de trabajo y el informe inicial del plan estratégico,2.1,Planificación,Firma consultora,11,3.4.3-08,2027-05-26,2027-06-09,315,
2.1-02,"Elaborar el diagnóstico del sistema aeronáutico, su marco normativo y su infraestructura",2.1,Ejecución,Firma consultora,36,2.1-01,2027-06-10,2027-07-29,315,
2.1-03,"Formular la visión, los lineamientos y el plan de acción y redactar el borrador del plan estratégico",2.1,Ejecución,Firma consultora,41,2.1-02,2027-07-30,2027-09-24,315,
2.1-04,Revisar el borrador del plan estratégico y consolidar las observaciones de CEPA y del BID,2.1,Monitoreo y control,Especialista de planificación y monitoreo,13,2.1-03,2027-09-27,2027-10-13,441,
2.1-05,Incorporar las observaciones y entregar la versión final del plan estratégico,2.1,Ejecución,Firma consultora,11,2.1-04,2027-10-14,2027-10-28,441,
2.1-06,Aprobar el plan estratégico final y remitirlo al BID,2.1,Cierre,CEPA,8,2.1-05,2027-10-29,2027-11-09,441,
2.2.1-01,Elaborar el plan de trabajo y el informe inicial del Plan Maestro,2.2.1,Planificación,Firma consultora,15,3.4.3-14,2027-05-26,2027-06-15,311,
2.2.1-02,"Elaborar el inventario, el diagnóstico de instalaciones y el pronóstico de demanda",2.2.1,Ejecución,Firma consultora,77,2.2.1-01,2027-06-16,2027-09-30,311,
2.2.1-03,"Determinar los requerimientos, evaluar alternativas y redactar el borrador del Plan Maestro con su plan de implementación y financiero",2.2.1,Ejecución,Firma consultora,109,"2.1-03,2.2.1-02",2027-10-01,2028-03-01,311,
2.2.1-04,"Revisar el borrador del Plan Maestro y consolidar las observaciones de CEPA, la AAC y el BID",2.2.1,Monitoreo y control,Especialista de planificación y monitoreo,27,2.2.1-03,2028-03-02,2028-04-07,311,
2.2.1-05,Incorporar las observaciones y las recomendaciones del estudio de conectividad y entregar la versión final del Plan Maestro,2.2.1,Ejecución,Firma consultora,21,"2.2.1-04,2.4-05",2028-04-10,2028-05-08,311,
2.2.1-06,Aprobar el Plan Maestro actualizado y entregarlo al BID,2.2.1,Cierre,CEPA,11,"2.1-06:FF+10,2.2.1-05",2028-05-09,2028-05-23,311,
2.2.2-01,"Preparar el programa, los materiales y la lista de participantes de la capacitación en planificación, gestión y operación",2.2.2,Planificación,Firma consultora,21,2.2.1-03,2028-03-02,2028-03-30,349,
2.2.2-02,"Impartir los cursos de planificación, gestión y operación aeroportuaria al menos a 21 funcionarios",2.2.2,Ejecución,Firma consultora,42,"2.2.1-06,2.2.2-01",2028-05-24,2028-07-20,311,
2.2.2-03,Aplicar las evaluaciones y los talleres de cierre a los participantes,2.2.2,Monitoreo y control,Firma consultora,7,2.2.2-02,2028-07-21,2028-07-31,311,
2.2.2-04,Certificar a los funcionarios aprobados y registrar el indicador R2.1,2.2.2,Cierre,Especialista de planificación y monitoreo,7,2.2.2-03,2028-08-01,2028-08-09,311,
2.3.1-01,Elaborar el plan de trabajo y el informe inicial de la estrategia BIM,2.3.1,Planificación,Firma consultora,11,3.4.3-19,2027-04-05,2027-04-19,518,
2.3.1-02,"Diagnosticar la madurez BIM de CEPA, sus procesos de diseño y sus herramientas",2.3.1,Ejecución,Firma consultora,21,2.3.1-01,2027-04-20,2027-05-18,518,
2.3.1-03,"Formular la estrategia BIM (usos, roles, entorno común de datos y requisitos de información) y redactar el borrador",2.3.1,Ejecución,Firma consultora,30,2.3.1-02,2027-05-19,2027-06-29,518,
2.3.1-04,Revisar el borrador de la estrategia BIM y consolidar las observaciones de CEPA,2.3.1,Monitoreo y control,Especialista técnico,11,2.3.1-03,2027-06-30,2027-07-14,518,
2.3.1-05,Incorporar las observaciones y entregar la versión final de la estrategia BIM,2.3.1,Ejecución,Firma consultora,8,2.3.1-04,2027-07-15,2027-07-26,518,
2.3.1-06,Aprobar la estrategia BIM final,2.3.1,Cierre,CEPA,7,2.3.1-05,2027-07-27,2027-08-04,526,
2.3.2-01,Preparar el programa y los materiales de la capacitación en BIM,2.3.2,Planificación,Firma consultora,15,2.3.1-05,2027-07-27,2027-08-16,518,
2.3.2-02,Impartir los cursos de BIM al personal de ingeniería de CEPA,2.3.2,Ejecución,Firma consultora,36,"2.3.1-06,2.3.2-01",2027-08-17,2027-10-05,518,
2.3.2-03,Evaluar a los participantes en BIM,2.3.2,Monitoreo y control,Firma consultora,7,2.3.2-02,2027-10-06,2027-10-14,518,
2.3.2-04,Entregar los materiales y el registro de la capacitación en BIM,2.3.2,Cierre,Especialista técnico,7,2.3.2-03,2027-10-15,2027-10-25,518,
2.4-01,Elaborar el plan de trabajo y el informe inicial del estudio de conectividad terrestre,2.4,Planificación,Firma consultora,11,3.4.3-25,2027-05-26,2027-06-09,417,
2.4-02,"Diagnosticar el acceso terrestre al AIES con aforos, encuestas y análisis de los modos de transporte",2.4,Ejecución,Firma consultora,41,2.4-01,2027-06-10,2027-08-05,417,
2.4-03,Evaluar alternativas de acceso hacia San Salvador y los destinos turísticos y redactar el borrador del estudio,2.4,Ejecución,Firma consultora,46,2.4-02,2027-08-06,2027-10-08,417,
2.4-04,Revisar el borrador del estudio de conectividad y consolidar las observaciones de CEPA,2.4,Monitoreo y control,Especialista de planificación y monitoreo,13,2.4-03,2027-10-11,2027-10-27,417,
2.4-05,Incorporar las observaciones y entregar el informe final del estudio de conectividad,2.4,Ejecución,Firma consultora,11,2.4-04,2027-10-28,2027-11-11,417,
2.4-06,Aprobar el informe final del estudio de conectividad,2.4,Cierre,CEPA,8,2.4-05,2027-11-12,2027-11-23,497,
2.5-01,Elaborar el plan de trabajo y el informe inicial del estudio de diversificación de destinos,2.5,Planificación,Firma consultora,11,3.4.3-30,2027-04-05,2027-04-19,540,
2.5-02,"Diagnosticar el mercado actual del AIES (tráfico, aerolíneas, rutas y zona de influencia)",2.5,Ejecución,Firma consultora,35,2.5-01,2027-04-20,2027-06-07,540,
2.5-03,"Analizar los mercados de origen y destino y las aerolíneas potenciales, priorizarlos y redactar el borrador del estudio",2.5,Ejecución,Firma consultora,46,2.5-02,2027-06-08,2027-08-10,540,
2.5-04,Revisar el borrador del estudio de diversificación y consolidar las observaciones de CEPA,2.5,Monitoreo y control,Especialista de planificación y monitoreo,13,2.5-03,2027-08-11,2027-08-27,540,
2.5-05,Incorporar las observaciones y entregar el informe final del estudio de diversificación,2.5,Ejecución,Firma consultora,11,2.5-04,2027-08-30,2027-09-13,540,
2.5-06,Aprobar el informe final del estudio de diversificación,2.5,Cierre,CEPA,8,2.5-05,2027-09-14,2027-09-23,540,
2.6.1-01,Registrar los proyectos de terminal y estacionamiento en EDGE y elaborar la autoevaluación,2.6.1,Planificación,Firma consultora,21,"1.1.1-05,1.1.3-05,3.4.3-35",2027-04-05,2027-05-03,96,
2.6.1-02,Realizar la auditoría de diseño y obtener el certificado preliminar EDGE,2.6.1,Ejecución,Firma consultora,36,2.6.1-01,2027-05-04,2027-06-22,96,
2.6.1-03,Acompañar a CEPA y a los contratistas para conservar las medidas EDGE durante la construcción,2.6.1,Monitoreo y control,Firma consultora,453,2.6.1-02,2027-06-23,2029-03-16,96,
2.6.1-04,Realizar la auditoría en sitio de las medidas EDGE de la terminal y del estacionamiento terminados,2.6.1,Ejecución,Firma consultora,26,"1.2.4-06,1.5.3-04,2.6.1-03",2029-03-19,2029-04-23,96,
2.6.1-05,Atender las observaciones del proveedor de certificación y presentar el informe de auditoría,2.6.1,Ejecución,Firma consultora,26,2.6.1-04,2029-04-24,2029-05-29,96,
2.6.1-06,Recibir el certificado EDGE final y el informe de auditoría,2.6.1,Cierre,CEPA,6,2.6.1-05,2029-05-30,2029-06-06,96,
2.6.2-01,Preparar el programa y los materiales de la capacitación en EDGE,2.6.2,Planificación,Firma consultora,11,2.6.1-02,2027-06-23,2027-07-07,567,
2.6.2-02,Impartir el curso de EDGE al personal previsto,2.6.2,Ejecución,Firma consultora,16,"2.6.1-04,2.6.2-01",2029-04-24,2029-05-15,99,
2.6.2-03,Evaluar y certificar a los participantes en EDGE,2.6.2,Monitoreo y control,Firma consultora,7,2.6.2-02,2029-05-16,2029-05-24,99,
2.6.2-04,Entregar el registro de la capacitación en EDGE,2.6.2,Cierre,Especialista técnico,6,2.6.2-03,2029-05-25,2029-06-01,99,
2.7-01,Elaborar el plan de trabajo y el informe inicial del estudio de separación de flujos,2.7,Planificación,Firma consultora,11,3.4.3-40,2027-04-05,2027-04-19,576,
2.7-02,Diagnosticar los flujos de llegadas y salidas de la terminal antigua mediante levantamiento y observación,2.7,Ejecución,Firma consultora,21,2.7-01,2027-04-20,2027-05-18,576,
2.7-03,Identificar y priorizar las intervenciones de separación de flujos y redactar el borrador del estudio,2.7,Ejecución,Firma consultora,30,"1.1.1-05,2.7-02",2027-05-19,2027-06-29,576,
2.7-04,Revisar el borrador del estudio de separación de flujos y consolidar las observaciones de CEPA,2.7,Monitoreo y control,Especialista técnico,11,2.7-03,2027-06-30,2027-07-14,576,
2.7-05,Incorporar las observaciones y entregar el informe final del estudio de separación de flujos,2.7,Ejecución,Firma consultora,8,2.7-04,2027-07-15,2027-07-26,576,
2.7-06,Aprobar el informe final del estudio de separación de flujos,2.7,Cierre,CEPA,7,2.7-05,2027-07-27,2027-08-04,576,
2.8-01,Elaborar el plan de trabajo y el informe inicial del estudio de movilidad interna,2.8,Planificación,Firma consultora,11,3.4.3-45,2027-04-05,2027-04-19,561,
2.8-02,Diagnosticar el tráfico de las vías internas con aforos en horas pico y en el dejar y recoger pasajeros,2.8,Ejecución,Firma consultora,30,2.8-01,2027-04-20,2027-05-31,561,
2.8-03,"Analizar los puntos de conflicto, definir las medidas y redactar el borrador del estudio",2.8,Ejecución,Firma consultora,36,"1.1.3-05,2.8-02",2027-06-01,2027-07-20,561,
2.8-04,Revisar el borrador del estudio de movilidad interna y consolidar las observaciones de CEPA,2.8,Monitoreo y control,Especialista técnico,11,2.8-03,2027-07-21,2027-08-04,561,
2.8-05,Incorporar las observaciones y entregar el informe final del estudio de movilidad interna,2.8,Ejecución,Firma consultora,8,2.8-04,2027-08-05,2027-08-16,561,
2.8-06,Aprobar el informe final del estudio de movilidad interna,2.8,Cierre,CEPA,7,2.8-05,2027-08-17,2027-08-25,561,
2.9-01,"Elaborar el diagnóstico de necesidades, el programa y los materiales de capacitación en igualdad e inclusión",2.9,Planificación,Firma consultora,30,3.4.3-50,2027-04-05,2027-05-14,61,
2.9-02,Impartir la capacitación a la primera cohorte de 100 funcionarios y evaluarla,2.9,Ejecución,Firma consultora,35,2.9-01,2027-05-17,2027-07-02,61,
2.9-03,Impartir la capacitación a la segunda cohorte de 100 funcionarios y evaluarla,2.9,Ejecución,Firma consultora,35,2.9-02:II+260,2028-05-15,2028-06-30,61,
2.9-04,Impartir la capacitación a la tercera cohorte de 100 funcionarios y evaluarla,2.9,Ejecución,Firma consultora,35,2.9-03:II+260,2029-05-14,2029-06-29,61,
2.9-05,Emitir las constancias de los 300 funcionarios aprobados y entregar el informe final del programa,2.9,Cierre,Firma consultora,11,2.9-04,2029-07-02,2029-07-16,61,
2.9-06,Aprobar el informe final y registrar el indicador T2 en el informe semestral,2.9,Cierre,Especialista socioambiental,7,2.9-05,2029-07-17,2029-07-25,61,
3.1.1-01,"Incorporar al Coordinador del Programa, al Coordinador general de obra y al Especialista de planificación y monitoreo",3.1.1,Inicio,CEPA,5,3.4.4-05,2026-04-16,2026-04-22,48,
3.1.1-02,Incorporar al Especialista de adquisiciones,3.1.1,Inicio,CEPA,5,3.4.4-05,2026-04-23,2026-04-29,48,
3.1.1-03,"Incorporar al Especialista técnico, al Especialista financiero y al Especialista socioambiental",3.1.1,Inicio,CEPA,5,3.4.4-05,2026-05-04,2026-05-08,41,
3.1.1-04,Registrar las firmas autorizadas del programa ante el BID,3.1.1,Inicio,Especialista financiero,5,3.1.1-01,2026-04-23,2026-04-29,48,
3.1.1-05,Documentar ante el BID la conformación de la UEP con dedicación exclusiva,3.1.1,Inicio,Coordinador del Programa,5,"3.1.1-01,3.1.1-02,3.1.1-03,3.1.1-04",2026-05-11,2026-05-15,41,
3.1.2-01,Ajustar el borrador del ROP acordado con el BID a la estructura de la UEP y a las cifras del PA,3.1.2,Inicio,Coordinador del Programa,15,"3.1.1-01,3.3.1-01",2026-06-01,2026-06-19,92,
3.1.2-02,Obtener la no objeción del BID al ROP ajustado,3.1.2,Inicio,BID,10,3.1.2-01,2026-06-22,2026-07-03,92,
3.1.2-03,Aprobar el ROP en CEPA mediante resolución de la autoridad superior,3.1.2,Inicio,CEPA,5,3.1.2-02,2026-07-06,2026-07-10,92,
3.1.3-01,Redactar el convenio de transferencia de recursos entre la República y CEPA,3.1.3,Inicio,Coordinador del Programa,20,3.1.1-05,2026-05-18,2026-06-12,676,
3.1.3-02,Obtener la no objeción del BID al texto del convenio,3.1.3,Inicio,BID,5,3.1.3-01,2026-06-15,2026-06-19,676,
3.1.3-03,Suscribir el convenio y ponerlo en vigencia,3.1.3,Inicio,CEPA,10,3.1.3-02,2026-06-22,2026-07-03,676,
3.1.4-01,Solicitar a la Dirección General de Tesorería la apertura de la cuenta especial en el BCR,3.1.4,Inicio,Especialista financiero,10,3.1.1-04,2026-04-30,2026-05-13,698,
3.1.4-02,Abrir y habilitar la cuenta especial para recibir desembolsos,3.1.4,Inicio,CEPA,10,3.1.4-01,2026-05-14,2026-05-27,698,
3.1.4-03,Registrar la cuenta especial ante el BID,3.1.4,Inicio,Especialista financiero,5,3.1.4-02,2026-05-28,2026-06-03,698,
3.2.1-01,"Actualizar la EDT, el cronograma y el presupuesto del PEP de noviembre de 2025 con las fechas reales del préstamo",3.2.1,Planificación,Especialista de planificación y monitoreo,20,3.1.1-01,2026-04-23,2026-05-20,538,
3.2.1-02,"Integrar al PEP el calendario de adquisiciones, hitos y desembolsos por componente",3.2.1,Planificación,Especialista de planificación y monitoreo,10,"3.2.1-01,3.2.3-02",2026-05-21,2026-06-03,538,
3.2.1-03,Aprobar el PEP en CEPA y presentarlo al BID,3.2.1,Planificación,Coordinador del Programa,5,3.2.1-02,2026-06-04,2026-06-10,538,
3.2.2-01,"Elaborar el POA 2027 con metas, cronograma físico y financiero y presupuesto por producto",3.2.2,Planificación,Especialista de planificación y monitoreo,20,3.2.1-03,2026-11-02,2026-11-27,436,
3.2.2-02,Aprobar el POA 2027 en CEPA y presentarlo al BID antes del inicio del año,3.2.2,Planificación,Coordinador del Programa,5,3.2.2-01,2026-11-30,2026-12-04,436,
3.2.2-03,"Elaborar el POA 2028 con metas, cronograma físico y financiero y presupuesto por producto",3.2.2,Planificación,Especialista de planificación y monitoreo,20,3.2.2-02,2027-11-01,2027-11-26,201,
3.2.2-04,Aprobar el POA 2028 en CEPA y presentarlo al BID antes del inicio del año,3.2.2,Planificación,Coordinador del Programa,5,3.2.2-03,2027-11-29,2027-12-03,546,
3.2.2-05,"Elaborar el POA 2029 con metas, cronograma físico y financiero y presupuesto por producto",3.2.2,Planificación,Especialista de planificación y monitoreo,20,3.2.2-04,2028-11-01,2028-11-28,309,
3.2.2-06,Aprobar el POA 2029 en CEPA y presentarlo al BID antes del inicio del año,3.2.2,Planificación,Coordinador del Programa,5,3.2.2-05,2028-11-29,2028-12-05,309,
3.2.2-07,"Elaborar el POA 2030 con metas, cronograma físico y financiero y presupuesto por producto",3.2.2,Planificación,Especialista de planificación y monitoreo,20,3.2.2-06,2029-11-01,2029-11-28,73,
3.2.2-08,Aprobar el POA 2030 en CEPA y presentarlo al BID antes del inicio del año,3.2.2,Planificación,Coordinador del Programa,5,3.2.2-07,2029-11-29,2029-12-05,73,
3.2.3-01,"Elaborar el Plan de Adquisiciones inicial 2026-1 con estacionamiento, su supervisión, la UEP y la auditoría del año 1",3.2.3,Planificación,CEPA,30,,2026-02-02,2026-03-13,107,
3.2.3-02,Obtener la no objeción del BID al Plan de Adquisiciones 2026-1,3.2.3,Planificación,BID,5,3.2.3-01,2026-04-07,2026-04-13,91,
3.2.3-03,"Actualizar el Plan de Adquisiciones a la versión 2026-2 con terminal, SSEI, plataformas y las tres supervisiones restantes",3.2.3,Planificación,Especialista de adquisiciones,20,3.2.3-02,2026-04-14,2026-05-11,91,
3.2.3-04,Obtener la no objeción del BID al Plan de Adquisiciones 2026-2,3.2.3,Planificación,BID,5,3.2.3-03,2026-07-08,2026-07-14,50,
3.2.3-05,Mantener el Plan de Adquisiciones actualizado en el sistema del BID cada vez que cambie un proceso,3.2.3,Monitoreo y control,Especialista de adquisiciones,791,3.2.3-04,2026-07-15,2029-07-25,168,
3.3.1-01,Revisar el PAAS del 8 de octubre de 2025 y ajustar el SGAS a la organización de la UEP,3.3.1,Planificación,Especialista socioambiental,15,3.1.1-03,2026-05-11,2026-05-29,92,
3.3.1-02,"Elaborar los procedimientos y formatos del SGAS: selección de obra, reporte de incidentes e informe de cumplimiento",3.3.1,Planificación,Especialista socioambiental,20,3.3.1-01,2026-06-01,2026-06-26,92,
3.3.1-03,Obtener la no objeción del BID al SGAS y al PAAS actualizados,3.3.1,Planificación,BID,10,3.3.1-02,2026-06-29,2026-07-10,92,
3.3.1-04,Incorporar el SGAS y el PAAS como anexos del ROP aprobado,3.3.1,Planificación,Especialista socioambiental,5,"3.1.2-03,3.3.1-03",2026-07-13,2026-07-17,92,
3.3.1-05,Elaborar el Plan de Gestión del Riesgo de Desastres y Cambio Climático final con los diseños aprobados,3.3.1,Planificación,Especialista socioambiental,31,"3.3.1-04,1.1.1-05,1.1.2-06,1.1.3-05,1.1.4-05",2026-11-11,2026-12-23,136,
3.3.1-06,Presentar al BID el Plan de Gestión del Riesgo de Desastres y Cambio Climático final,3.3.1,Planificación,Coordinador del Programa,6,3.3.1-05,2026-12-24,2026-12-31,136,
3.3.2-01,Evaluar el riesgo operacional y definir las fases de trabajo del lado aire junto con la operación aeroportuaria,3.3.2,Planificación,Especialista técnico,20,"1.1.2-06,3.3.1-04",2026-11-11,2026-12-08,86,
3.3.2-02,"Elaborar el protocolo de seguridad operacional para obras del lado aire, de uso de contratistas y supervisión",3.3.2,Planificación,Coordinador general de obra,30,3.3.2-01,2026-12-09,2027-01-19,86,
3.3.2-03,Presentar el protocolo a la AAC y atender sus observaciones,3.3.2,Planificación,Coordinador general de obra,15,3.3.2-02,2027-01-20,2027-02-09,86,
3.3.2-04,Aprobar el protocolo de seguridad operacional de las obras del lado aire,3.3.2,Planificación,AAC,22,3.3.2-03,2027-02-10,2027-03-11,86,
3.3.3-01,"Diseñar el procedimiento del mecanismo de quejas y reclamos: canales, plazos de respuesta y registro de casos",3.3.3,Planificación,Especialista socioambiental,15,3.3.1-04,2026-07-20,2026-08-07,261,
3.3.3-02,"Instalar y difundir los canales del mecanismo entre trabajadores, usuarios, arrendatarios, aerolíneas y comunidades",3.3.3,Ejecución,Especialista socioambiental,20,3.3.3-01,2026-08-10,2026-09-04,261,
3.3.3-03,"Operar el mecanismo, registrar los casos y dar respuesta durante las obras",3.3.3,Monitoreo y control,Especialista socioambiental,660,3.3.3-02,2026-09-07,2029-03-16,261,
3.3.4-01,Acordar con el BID el formato del informe de cumplimiento ambiental y social semestral,3.3.4,Planificación,Especialista socioambiental,10,3.3.1-04,2026-07-20,2026-07-31,362,
3.3.4-02,Presentar los informes semestrales de cumplimiento ambiental y social junto con el informe de progreso,3.3.4,Monitoreo y control,Especialista socioambiental,544,"1.5.1-01:II+0,3.3.4-01",2027-02-16,2029-03-16,221,
3.3.4-03,Presentar al BID el informe final ambiental y social del programa,3.3.4,Cierre,Especialista socioambiental,15,"3.3.4-02,1.7.4-05,1.7.4-06,1.7.4-07,1.7.4-08",2029-07-06,2029-07-26,142,
3.4.1-01,Preparar los documentos de licitación del estacionamiento y el sistema solar,3.4.1,Planificación,Especialista de adquisiciones,45,"1.1.3-05:FF+0,3.1.1-02,3.2.3-02",2026-06-23,2026-08-24,224,
3.4.1-02,Obtener la no objeción del BID a los documentos de licitación del estacionamiento y el sistema solar,3.4.1,Planificación,BID,5,"3.3.1-04,3.4.1-01",2026-08-25,2026-08-31,224,
3.4.1-03,Publicar el aviso específico de adquisiciones del estacionamiento y el sistema solar y recibir ofertas hasta la apertura,3.4.1,Ejecución,Especialista de adquisiciones,31,"3.1.2-03,3.4.1-02",2026-09-04,2026-10-16,221,
3.4.1-04,Evaluar las ofertas del estacionamiento y el sistema solar y elaborar el informe de evaluación,3.4.1,Ejecución,Especialista de adquisiciones,29,3.4.1-03,2026-10-19,2026-11-26,221,
3.4.1-05,Obtener la no objeción del BID a la evaluación y a la recomendación de adjudicación del estacionamiento y el sistema solar,3.4.1,Ejecución,BID,5,3.4.1-04,2026-11-27,2026-12-03,221,
3.4.1-06,Adjudicar y firmar el contrato de obra del estacionamiento y el sistema solar,3.4.1,Ejecución,CEPA,39,3.4.1-05,2026-12-04,2027-01-27,221,
3.4.1-07,Preparar los documentos de licitación de la terminal de pasajeros,3.4.1,Planificación,Especialista de adquisiciones,45,"1.1.1-05:FF+0,3.1.1-02,3.2.3-04",2026-07-28,2026-09-28,41,
3.4.1-08,Obtener la no objeción del BID a los documentos de licitación de la terminal de pasajeros,3.4.1,Planificación,BID,5,"3.3.1-04,3.4.1-07",2026-09-29,2026-10-05,41,
3.4.1-09,Publicar el aviso específico de adquisiciones de la terminal de pasajeros y recibir ofertas hasta la apertura,3.4.1,Ejecución,Especialista de adquisiciones,32,"3.1.2-03,3.4.1-08",2026-10-08,2026-11-20,39,
3.4.1-10,Evaluar las ofertas de la terminal de pasajeros y elaborar el informe de evaluación,3.4.1,Ejecución,Especialista de adquisiciones,44,3.4.1-09,2026-11-23,2027-01-21,39,
3.4.1-11,Obtener la no objeción del BID a la evaluación y a la recomendación de adjudicación de la terminal de pasajeros,3.4.1,Ejecución,BID,5,3.4.1-10,2027-01-22,2027-01-28,39,
3.4.1-12,Adjudicar y firmar el contrato de obra de la terminal de pasajeros,3.4.1,Ejecución,CEPA,61,3.4.1-11,2027-01-29,2027-04-23,39,
3.4.1-13,Preparar los documentos de licitación del SSEI,3.4.1,Planificación,Especialista de adquisiciones,45,"1.1.4-05:FF+0,3.1.1-02,3.2.3-04",2026-08-05,2026-10-06,252,
3.4.1-14,Obtener la no objeción del BID a los documentos de licitación del SSEI,3.4.1,Planificación,BID,5,"3.3.1-04,3.4.1-13",2026-10-07,2026-10-13,252,
3.4.1-15,Publicar el aviso específico de adquisiciones del SSEI y recibir ofertas hasta la apertura,3.4.1,Ejecución,Especialista de adquisiciones,31,"3.1.2-03,3.4.1-14",2027-01-06,2027-02-17,192,
3.4.1-16,Evaluar las ofertas del SSEI y elaborar el informe de evaluación,3.4.1,Ejecución,Especialista de adquisiciones,28,3.4.1-15,2027-02-18,2027-03-29,192,
3.4.1-17,Obtener la no objeción del BID a la evaluación y a la recomendación de adjudicación del SSEI,3.4.1,Ejecución,BID,5,3.4.1-16,2027-03-30,2027-04-05,192,
3.4.1-18,Adjudicar y firmar el contrato de obra del SSEI,3.4.1,Ejecución,CEPA,38,3.4.1-17,2027-04-06,2027-05-27,192,
3.4.1-19,Preparar los documentos de licitación de las plataformas y la calle Foxtrot,3.4.1,Planificación,Especialista de adquisiciones,45,"1.1.2-06:FF+0,3.1.1-02,3.2.3-04",2026-09-09,2026-11-10,82,
3.4.1-20,Obtener la no objeción del BID a los documentos de licitación de las plataformas y la calle Foxtrot,3.4.1,Planificación,BID,5,"3.3.1-04,3.4.1-19",2026-11-11,2026-11-17,82,
3.4.1-21,Publicar el aviso específico de adquisiciones de las plataformas y la calle Foxtrot y recibir ofertas hasta la apertura,3.4.1,Ejecución,Especialista de adquisiciones,31,"3.1.2-03,3.4.1-20",2027-03-12,2027-04-23,0,si
3.4.1-22,Evaluar las ofertas de las plataformas y la calle Foxtrot y elaborar el informe de evaluación,3.4.1,Ejecución,Especialista de adquisiciones,25,3.4.1-21,2027-04-26,2027-05-28,0,si
3.4.1-23,Obtener la no objeción del BID a la evaluación y a la recomendación de adjudicación de las plataformas y la calle Foxtrot,3.4.1,Ejecución,BID,5,3.4.1-22,2027-05-31,2027-06-04,0,si
3.4.1-24,Adjudicar y firmar el contrato de obra de las plataformas y la calle Foxtrot,3.4.1,Ejecución,CEPA,34,3.4.1-23,2027-06-07,2027-07-22,0,si
3.4.2-01,"Preparar los términos de referencia, la solicitud de expresiones de interés y la lista corta de la supervisión del estacionamiento y el sistema solar",3.4.2,Planificación,Especialista de adquisiciones,17,3.2.3-02,2026-05-06,2026-05-28,224,
3.4.2-02,Obtener la no objeción del BID a los términos de referencia y a la lista corta de la supervisión del estacionamiento y el sistema solar,3.4.2,Planificación,BID,5,3.4.2-01,2026-05-29,2026-06-04,224,
3.4.2-03,Invitar a las firmas de la lista corta y recibir las propuestas de la supervisión del estacionamiento y el sistema solar,3.4.2,Ejecución,Especialista de adquisiciones,40,3.4.2-02,2026-06-05,2026-07-30,224,
3.4.2-04,Evaluar las propuestas técnicas y económicas y negociar el contrato de la supervisión del estacionamiento y el sistema solar,3.4.2,Ejecución,Especialista de adquisiciones,124,3.4.2-03,2026-07-31,2027-01-20,224,
3.4.2-05,Obtener la no objeción del BID al informe de evaluación combinado y al contrato negociado de la supervisión del estacionamiento y el sistema solar,3.4.2,Ejecución,BID,5,3.4.2-04,2027-01-21,2027-01-27,224,
3.4.2-06,Firmar el contrato de supervisión del estacionamiento y el sistema solar,3.4.2,Ejecución,CEPA,5,3.4.2-05,2027-01-28,2027-02-03,224,
3.4.2-07,"Preparar los términos de referencia, la solicitud de expresiones de interés y la lista corta de la supervisión de la terminal",3.4.2,Planificación,Especialista de adquisiciones,49,"3.1.2-03,3.2.3-04,3.3.1-04",2026-10-13,2026-12-18,32,
3.4.2-08,Obtener la no objeción del BID a los términos de referencia y a la lista corta de la supervisión de la terminal,3.4.2,Planificación,BID,5,3.4.2-07,2026-12-21,2026-12-25,32,
3.4.2-09,Invitar a las firmas de la lista corta y recibir las propuestas de la supervisión de la terminal,3.4.2,Ejecución,Especialista de adquisiciones,30,3.4.2-08,2026-12-28,2027-02-05,32,
3.4.2-10,Evaluar las propuestas técnicas y económicas y negociar el contrato de la supervisión de la terminal,3.4.2,Ejecución,Especialista de adquisiciones,60,3.4.2-09,2027-02-08,2027-04-30,32,
3.4.2-11,Obtener la no objeción del BID al informe de evaluación combinado y al contrato negociado de la supervisión de la terminal,3.4.2,Ejecución,BID,5,3.4.2-10,2027-05-03,2027-05-07,32,
3.4.2-12,Firmar el contrato de supervisión de la terminal,3.4.2,Ejecución,CEPA,8,3.4.2-11,2027-05-10,2027-05-19,32,
3.4.2-13,"Preparar los términos de referencia, la solicitud de expresiones de interés y la lista corta de la supervisión del SSEI",3.4.2,Planificación,Especialista de adquisiciones,47,"3.1.2-03,3.2.3-04,3.3.1-04",2026-11-11,2027-01-14,187,
3.4.2-14,Obtener la no objeción del BID a los términos de referencia y a la lista corta de la supervisión del SSEI,3.4.2,Planificación,BID,5,3.4.2-13,2027-01-15,2027-01-21,187,
3.4.2-15,Invitar a las firmas de la lista corta y recibir las propuestas de la supervisión del SSEI,3.4.2,Ejecución,Especialista de adquisiciones,30,3.4.2-14,2027-01-22,2027-03-04,187,
3.4.2-16,Evaluar las propuestas técnicas y económicas y negociar el contrato de la supervisión del SSEI,3.4.2,Ejecución,Especialista de adquisiciones,57,3.4.2-15,2027-03-05,2027-05-24,187,
3.4.2-17,Obtener la no objeción del BID al informe de evaluación combinado y al contrato negociado de la supervisión del SSEI,3.4.2,Ejecución,BID,5,3.4.2-16,2027-05-25,2027-05-31,187,
3.4.2-18,Firmar el contrato de supervisión del SSEI,3.4.2,Ejecución,CEPA,8,3.4.2-17,2027-06-01,2027-06-10,187,
3.4.2-19,"Preparar los términos de referencia, la solicitud de expresiones de interés y la lista corta de la supervisión de las plataformas y la calle Foxtrot",3.4.2,Planificación,Especialista de adquisiciones,40,"3.1.2-03,3.2.3-04,3.3.1-04",2027-01-19,2027-03-15,4,
3.4.2-20,Obtener la no objeción del BID a los términos de referencia y a la lista corta de la supervisión de las plataformas y la calle Foxtrot,3.4.2,Planificación,BID,5,3.4.2-19,2027-03-16,2027-03-22,4,
3.4.2-21,Invitar a las firmas de la lista corta y recibir las propuestas de la supervisión de las plataformas y la calle Foxtrot,3.4.2,Ejecución,Especialista de adquisiciones,30,3.4.2-20,2027-03-23,2027-05-03,4,
3.4.2-22,Evaluar las propuestas técnicas y económicas y negociar el contrato de la supervisión de las plataformas y la calle Foxtrot,3.4.2,Ejecución,Especialista de adquisiciones,49,3.4.2-21,2027-05-04,2027-07-09,4,
3.4.2-23,Obtener la no objeción del BID al informe de evaluación combinado y al contrato negociado de la supervisión de las plataformas y la calle Foxtrot,3.4.2,Ejecución,BID,5,3.4.2-22,2027-07-12,2027-07-16,4,
3.4.2-24,Firmar el contrato de supervisión de las plataformas y la calle Foxtrot,3.4.2,Ejecución,CEPA,8,3.4.2-23,2027-07-19,2027-07-28,4,
3.4.3-01,Incluir las consultorías del Componente II en el Plan de Adquisiciones,3.4.3,Planificación,Especialista de adquisiciones,15,3.2.3-04,2026-11-02,2026-11-20,61,
3.4.3-02,Obtener la no objeción del BID a la actualización del PA con el Componente II,3.4.3,Planificación,BID,5,3.4.3-01,2026-11-23,2026-11-27,61,
3.4.3-03,"Preparar los términos de referencia, la solicitud de expresiones de interés y la lista corta para el plan estratégico del sistema aeronáutico (producto 2.1)",3.4.3,Planificación,Especialista de adquisiciones,40,"3.1.2-03,3.4.3-02",2026-11-30,2027-01-22,315,
3.4.3-04,Obtener la no objeción del BID a los términos de referencia y a la lista corta del plan estratégico del sistema aeronáutico (producto 2.1),3.4.3,Planificación,BID,5,3.4.3-03,2027-01-25,2027-01-29,315,
3.4.3-05,Invitar a las firmas de la lista corta y recibir las propuestas para el plan estratégico del sistema aeronáutico (producto 2.1),3.4.3,Ejecución,Especialista de adquisiciones,30,3.4.3-04,2027-02-01,2027-03-12,315,
3.4.3-06,Evaluar las propuestas y negociar el contrato para el plan estratégico del sistema aeronáutico (producto 2.1),3.4.3,Ejecución,Especialista de adquisiciones,35,3.4.3-05,2027-03-15,2027-04-30,315,
3.4.3-07,Obtener la no objeción del BID al informe de evaluación y al contrato negociado del plan estratégico del sistema aeronáutico (producto 2.1),3.4.3,Ejecución,BID,7,3.4.3-06,2027-05-03,2027-05-11,315,
3.4.3-08,Firmar el contrato de consultoría para el plan estratégico del sistema aeronáutico (producto 2.1),3.4.3,Ejecución,CEPA,10,3.4.3-07,2027-05-12,2027-05-25,315,
3.4.3-09,"Preparar los términos de referencia, la solicitud de expresiones de interés y la lista corta para la actualización del Plan Maestro y la capacitación (productos 2.2.1 y 2.2.2)",3.4.3,Planificación,Especialista de adquisiciones,40,"3.1.2-03,3.4.3-02",2026-11-30,2027-01-22,311,
3.4.3-10,Obtener la no objeción del BID a los términos de referencia y a la lista corta de la actualización del Plan Maestro y la capacitación (productos 2.2.1 y 2.2.2),3.4.3,Planificación,BID,5,3.4.3-09,2027-01-25,2027-01-29,311,
3.4.3-11,Invitar a las firmas de la lista corta y recibir las propuestas para la actualización del Plan Maestro y la capacitación (productos 2.2.1 y 2.2.2),3.4.3,Ejecución,Especialista de adquisiciones,30,3.4.3-10,2027-02-01,2027-03-12,311,
3.4.3-12,Evaluar las propuestas y negociar el contrato para la actualización del Plan Maestro y la capacitación (productos 2.2.1 y 2.2.2),3.4.3,Ejecución,Especialista de adquisiciones,35,3.4.3-11,2027-03-15,2027-04-30,311,
3.4.3-13,Obtener la no objeción del BID al informe de evaluación y al contrato negociado de la actualización del Plan Maestro y la capacitación (productos 2.2.1 y 2.2.2),3.4.3,Ejecución,BID,7,3.4.3-12,2027-05-03,2027-05-11,311,
3.4.3-14,Firmar el contrato de consultoría para la actualización del Plan Maestro y la capacitación (productos 2.2.1 y 2.2.2),3.4.3,Ejecución,CEPA,10,3.4.3-13,2027-05-12,2027-05-25,311,
3.4.3-15,Preparar los términos de referencia y la solicitud de expresiones de interés para la estrategia y capacitación BIM (productos 2.3.1 y 2.3.2),3.4.3,Planificación,Especialista de adquisiciones,20,"3.1.2-03,3.4.3-02",2026-11-30,2026-12-25,518,
3.4.3-16,Publicar la solicitud de expresiones de interés y conformar la lista corta nacional para la estrategia y capacitación BIM (productos 2.3.1 y 2.3.2),3.4.3,Ejecución,Especialista de adquisiciones,20,3.4.3-15,2026-12-28,2027-01-22,518,
3.4.3-17,Invitar a las firmas de la lista corta y recibir las propuestas para la estrategia y capacitación BIM (productos 2.3.1 y 2.3.2),3.4.3,Ejecución,Especialista de adquisiciones,20,3.4.3-16,2027-01-25,2027-02-19,518,
3.4.3-18,Evaluar las propuestas y negociar el contrato para la estrategia y capacitación BIM (productos 2.3.1 y 2.3.2),3.4.3,Ejecución,Especialista de adquisiciones,20,3.4.3-17,2027-02-22,2027-03-19,518,
3.4.3-19,Adjudicar y firmar el contrato de consultoría para la estrategia y capacitación BIM (productos 2.3.1 y 2.3.2),3.4.3,Ejecución,CEPA,10,3.4.3-18,2027-03-22,2027-04-02,518,
3.4.3-20,"Preparar los términos de referencia, la solicitud de expresiones de interés y la lista corta para el estudio de conectividad terrestre (producto 2.4)",3.4.3,Planificación,Especialista de adquisiciones,40,"3.1.2-03,3.4.3-02",2026-11-30,2027-01-22,417,
3.4.3-21,Obtener la no objeción del BID a los términos de referencia y a la lista corta del estudio de conectividad terrestre (producto 2.4),3.4.3,Planificación,BID,5,3.4.3-20,2027-01-25,2027-01-29,417,
3.4.3-22,Invitar a las firmas de la lista corta y recibir las propuestas para el estudio de conectividad terrestre (producto 2.4),3.4.3,Ejecución,Especialista de adquisiciones,30,3.4.3-21,2027-02-01,2027-03-12,417,
3.4.3-23,Evaluar las propuestas y negociar el contrato para el estudio de conectividad terrestre (producto 2.4),3.4.3,Ejecución,Especialista de adquisiciones,35,3.4.3-22,2027-03-15,2027-04-30,417,
3.4.3-24,Obtener la no objeción del BID al informe de evaluación y al contrato negociado del estudio de conectividad terrestre (producto 2.4),3.4.3,Ejecución,BID,7,3.4.3-23,2027-05-03,2027-05-11,417,
3.4.3-25,Firmar el contrato de consultoría para el estudio de conectividad terrestre (producto 2.4),3.4.3,Ejecución,CEPA,10,3.4.3-24,2027-05-12,2027-05-25,417,
3.4.3-26,Preparar los términos de referencia y la solicitud de expresiones de interés para el estudio de diversificación de destinos (producto 2.5),3.4.3,Planificación,Especialista de adquisiciones,20,"3.1.2-03,3.4.3-02",2026-11-30,2026-12-25,540,
3.4.3-27,Publicar la solicitud de expresiones de interés y conformar la lista corta nacional para el estudio de diversificación de destinos (producto 2.5),3.4.3,Ejecución,Especialista de adquisiciones,20,3.4.3-26,2026-12-28,2027-01-22,540,
3.4.3-28,Invitar a las firmas de la lista corta y recibir las propuestas para el estudio de diversificación de destinos (producto 2.5),3.4.3,Ejecución,Especialista de adquisiciones,20,3.4.3-27,2027-01-25,2027-02-19,540,
3.4.3-29,Evaluar las propuestas y negociar el contrato para el estudio de diversificación de destinos (producto 2.5),3.4.3,Ejecución,Especialista de adquisiciones,20,3.4.3-28,2027-02-22,2027-03-19,540,
3.4.3-30,Adjudicar y firmar el contrato de consultoría para el estudio de diversificación de destinos (producto 2.5),3.4.3,Ejecución,CEPA,10,3.4.3-29,2027-03-22,2027-04-02,540,
3.4.3-31,Preparar los términos de referencia y la solicitud de expresiones de interés para la auditoría y capacitación para la certificación EDGE (productos 2.6.1 y 2.6.2),3.4.3,Planificación,Especialista de adquisiciones,20,"3.1.2-03,3.4.3-02",2026-11-30,2026-12-25,96,
3.4.3-32,Publicar la solicitud de expresiones de interés y conformar la lista corta nacional para la auditoría y capacitación para la certificación EDGE (productos 2.6.1 y 2.6.2),3.4.3,Ejecución,Especialista de adquisiciones,20,3.4.3-31,2026-12-28,2027-01-22,96,
3.4.3-33,Invitar a las firmas de la lista corta y recibir las propuestas para la auditoría y capacitación para la certificación EDGE (productos 2.6.1 y 2.6.2),3.4.3,Ejecución,Especialista de adquisiciones,20,3.4.3-32,2027-01-25,2027-02-19,96,
3.4.3-34,Evaluar las propuestas y negociar el contrato para la auditoría y capacitación para la certificación EDGE (productos 2.6.1 y 2.6.2),3.4.3,Ejecución,Especialista de adquisiciones,20,3.4.3-33,2027-02-22,2027-03-19,96,
3.4.3-35,Adjudicar y firmar el contrato de consultoría para la auditoría y capacitación para la certificación EDGE (productos 2.6.1 y 2.6.2),3.4.3,Ejecución,CEPA,10,3.4.3-34,2027-03-22,2027-04-02,96,
3.4.3-36,Preparar los términos de referencia y la solicitud de expresiones de interés para el estudio de separación de flujos (producto 2.7),3.4.3,Planificación,Especialista de adquisiciones,20,"3.1.2-03,3.4.3-02",2026-11-30,2026-12-25,576,
3.4.3-37,Publicar la solicitud de expresiones de interés y conformar la lista corta nacional para el estudio de separación de flujos (producto 2.7),3.4.3,Ejecución,Especialista de adquisiciones,20,3.4.3-36,2026-12-28,2027-01-22,576,
3.4.3-38,Invitar a las firmas de la lista corta y recibir las propuestas para el estudio de separación de flujos (producto 2.7),3.4.3,Ejecución,Especialista de adquisiciones,20,3.4.3-37,2027-01-25,2027-02-19,576,
3.4.3-39,Evaluar las propuestas y negociar el contrato para el estudio de separación de flujos (producto 2.7),3.4.3,Ejecución,Especialista de adquisiciones,20,3.4.3-38,2027-02-22,2027-03-19,576,
3.4.3-40,Adjudicar y firmar el contrato de consultoría para el estudio de separación de flujos (producto 2.7),3.4.3,Ejecución,CEPA,10,3.4.3-39,2027-03-22,2027-04-02,576,
3.4.3-41,Preparar los términos de referencia y la solicitud de expresiones de interés para el estudio de movilidad interna (producto 2.8),3.4.3,Planificación,Especialista de adquisiciones,20,"3.1.2-03,3.4.3-02",2026-11-30,2026-12-25,561,
3.4.3-42,Publicar la solicitud de expresiones de interés y conformar la lista corta nacional para el estudio de movilidad interna (producto 2.8),3.4.3,Ejecución,Especialista de adquisiciones,20,3.4.3-41,2026-12-28,2027-01-22,561,
3.4.3-43,Invitar a las firmas de la lista corta y recibir las propuestas para el estudio de movilidad interna (producto 2.8),3.4.3,Ejecución,Especialista de adquisiciones,20,3.4.3-42,2027-01-25,2027-02-19,561,
3.4.3-44,Evaluar las propuestas y negociar el contrato para el estudio de movilidad interna (producto 2.8),3.4.3,Ejecución,Especialista de adquisiciones,20,3.4.3-43,2027-02-22,2027-03-19,561,
3.4.3-45,Adjudicar y firmar el contrato de consultoría para el estudio de movilidad interna (producto 2.8),3.4.3,Ejecución,CEPA,10,3.4.3-44,2027-03-22,2027-04-02,561,
3.4.3-46,Preparar los términos de referencia y la solicitud de expresiones de interés para el programa de igualdad e inclusión (producto 2.9),3.4.3,Planificación,Especialista de adquisiciones,20,"3.1.2-03,3.4.3-02",2026-11-30,2026-12-25,61,
3.4.3-47,Publicar la solicitud de expresiones de interés y conformar la lista corta nacional para el programa de igualdad e inclusión (producto 2.9),3.4.3,Ejecución,Especialista de adquisiciones,20,3.4.3-46,2026-12-28,2027-01-22,61,
3.4.3-48,Invitar a las firmas de la lista corta y recibir las propuestas para el programa de igualdad e inclusión (producto 2.9),3.4.3,Ejecución,Especialista de adquisiciones,20,3.4.3-47,2027-01-25,2027-02-19,61,
3.4.3-49,Evaluar las propuestas y negociar el contrato para el programa de igualdad e inclusión (producto 2.9),3.4.3,Ejecución,Especialista de adquisiciones,20,3.4.3-48,2027-02-22,2027-03-19,61,
3.4.3-50,Adjudicar y firmar el contrato de consultoría para el programa de igualdad e inclusión (producto 2.9),3.4.3,Ejecución,CEPA,10,3.4.3-49,2027-03-22,2027-04-02,61,
3.4.4-01,Preparar los términos de referencia y la convocatoria de los siete consultores clave de la UEP,3.4.4,Inicio,CEPA,18,,2026-02-02,2026-02-25,48,
3.4.4-02,Obtener la no objeción del BID a los términos de referencia de los siete consultores clave,3.4.4,Inicio,BID,5,3.4.4-01,2026-02-26,2026-03-04,48,
3.4.4-03,"Recibir los currículos, evaluar y seleccionar a los siete consultores clave",3.4.4,Inicio,CEPA,20,3.4.4-02,2026-03-05,2026-04-01,48,
3.4.4-04,Obtener la no objeción del BID a la selección de los siete consultores clave,3.4.4,Inicio,BID,5,3.4.4-03,2026-04-02,2026-04-08,48,
3.4.4-05,Firmar los contratos de los siete consultores clave de la UEP,3.4.4,Inicio,CEPA,5,3.4.4-04,2026-04-09,2026-04-15,48,
3.4.4-06,Preparar los términos de referencia y la convocatoria del técnico de apoyo administrativo,3.4.4,Planificación,Especialista de adquisiciones,10,"3.1.1-02,3.2.3-04",2026-07-15,2026-07-28,914,
3.4.4-07,Obtener la no objeción del BID a los términos de referencia del técnico de apoyo,3.4.4,Planificación,BID,5,3.4.4-06,2026-07-29,2026-08-04,914,
3.4.4-08,"Recibir los currículos, evaluar y seleccionar al técnico de apoyo",3.4.4,Ejecución,Especialista de adquisiciones,20,3.4.4-07,2026-08-05,2026-09-01,914,
3.4.4-09,Obtener la no objeción del BID a la selección del técnico de apoyo,3.4.4,Ejecución,BID,5,3.4.4-08,2026-09-02,2026-09-08,914,
3.4.4-10,Firmar el contrato del técnico de apoyo administrativo,3.4.4,Ejecución,CEPA,5,3.4.4-09,2026-09-09,2026-09-15,914,
3.4.4-11,Preparar los términos de referencia y la lista corta de la auditoría externa año 1,3.4.4,Planificación,Especialista de adquisiciones,5,"3.1.2-03,3.2.3-02",2027-04-01,2027-04-07,536,
3.4.4-12,Obtener la no objeción del BID a los términos de referencia de la auditoría año 1,3.4.4,Planificación,BID,5,3.4.4-11,2027-04-08,2027-04-14,536,
3.4.4-13,"Invitar a las firmas, recibir y evaluar las propuestas de la auditoría año 1 por menor costo",3.4.4,Ejecución,Especialista de adquisiciones,5,3.4.4-12,2027-04-15,2027-04-21,536,
3.4.4-14,Obtener la no objeción del BID a la recomendación de adjudicación de la auditoría año 1,3.4.4,Ejecución,BID,5,3.4.4-13,2027-04-22,2027-04-28,536,
3.4.4-15,Firmar el contrato de la auditoría externa año 1,3.4.4,Ejecución,CEPA,5,3.4.4-14,2027-04-29,2027-05-05,536,
3.4.4-16,Preparar los términos de referencia y la lista corta de la auditoría externa año 2,3.4.4,Planificación,Especialista de adquisiciones,30,"3.1.2-03,3.2.3-04",2027-09-13,2027-10-22,426,
3.4.4-17,Obtener la no objeción del BID a los términos de referencia de la auditoría año 2,3.4.4,Planificación,BID,5,3.4.4-16,2027-10-25,2027-10-29,426,
3.4.4-18,"Invitar a las firmas, recibir y evaluar las propuestas de la auditoría año 2 por menor costo",3.4.4,Ejecución,Especialista de adquisiciones,25,3.4.4-17,2027-11-01,2027-12-03,426,
3.4.4-19,Obtener la no objeción del BID a la recomendación de adjudicación de la auditoría año 2,3.4.4,Ejecución,BID,5,3.4.4-18,2027-12-06,2027-12-10,426,
3.4.4-20,Firmar el contrato de la auditoría externa año 2,3.4.4,Ejecución,CEPA,8,3.4.4-19,2027-12-13,2027-12-22,426,
3.4.4-21,Preparar los términos de referencia y la lista corta de la auditoría externa año 3,3.4.4,Planificación,Especialista de adquisiciones,30,"3.1.2-03,3.2.3-04",2028-09-12,2028-10-23,220,
3.4.4-22,Obtener la no objeción del BID a los términos de referencia de la auditoría año 3,3.4.4,Planificación,BID,5,3.4.4-21,2028-10-24,2028-10-30,220,
3.4.4-23,"Invitar a las firmas, recibir y evaluar las propuestas de la auditoría año 3 por menor costo",3.4.4,Ejecución,Especialista de adquisiciones,25,3.4.4-22,2028-10-31,2028-12-04,220,
3.4.4-24,Obtener la no objeción del BID a la recomendación de adjudicación de la auditoría año 3,3.4.4,Ejecución,BID,5,3.4.4-23,2028-12-05,2028-12-11,220,
3.4.4-25,Firmar el contrato de la auditoría externa año 3,3.4.4,Ejecución,CEPA,8,3.4.4-24,2028-12-12,2028-12-21,220,
3.4.4-26,Preparar los términos de referencia y la lista corta de la auditoría externa año 4,3.4.4,Planificación,Especialista de adquisiciones,30,"3.1.2-03,3.2.3-04",2029-04-16,2029-05-25,101,
3.4.4-27,Obtener la no objeción del BID a los términos de referencia de la auditoría año 4,3.4.4,Planificación,BID,5,3.4.4-26,2029-05-28,2029-06-01,101,
3.4.4-28,"Invitar a las firmas, recibir y evaluar las propuestas de la auditoría año 4 por menor costo",3.4.4,Ejecución,Especialista de adquisiciones,25,3.4.4-27,2029-06-04,2029-07-06,101,
3.4.4-29,Obtener la no objeción del BID a la recomendación de adjudicación de la auditoría año 4,3.4.4,Ejecución,BID,5,3.4.4-28,2029-07-09,2029-07-13,101,
3.4.4-30,Firmar el contrato de la auditoría externa año 4,3.4.4,Ejecución,CEPA,8,3.4.4-29,2029-07-16,2029-07-25,101,
3.4.4-31,Preparar los términos de referencia y la solicitud de expresiones de interés de la evaluación de medio término,3.4.4,Planificación,Especialista de adquisiciones,17,"3.1.2-03,3.2.3-04,3.5.3-01",2027-11-08,2027-11-30,201,
3.4.4-32,Publicar la solicitud de expresiones de interés y conformar la lista corta nacional de la evaluación de medio término,3.4.4,Ejecución,Especialista de adquisiciones,17,3.4.4-31,2027-12-01,2027-12-23,201,
3.4.4-33,Invitar a las firmas de la lista corta y recibir las propuestas de la evaluación de medio término,3.4.4,Ejecución,Especialista de adquisiciones,20,3.4.4-32,2027-12-24,2028-01-20,201,
3.4.4-34,Evaluar las propuestas y negociar el contrato de la evaluación de medio término,3.4.4,Ejecución,Especialista de adquisiciones,33,3.4.4-33,2028-01-21,2028-03-07,201,
3.4.4-35,Adjudicar y firmar el contrato de la evaluación de medio término,3.4.4,Ejecución,CEPA,10,3.4.4-34,2028-03-08,2028-03-21,201,
3.4.4-36,Preparar los términos de referencia y la solicitud de expresiones de interés de la evaluación final,3.4.4,Planificación,Especialista de adquisiciones,17,"3.1.2-03,3.2.3-04,1.2.4-06:FI-60",2028-12-25,2029-01-16,0,si
3.4.4-37,Publicar la solicitud de expresiones de interés y conformar la lista corta nacional de la evaluación final,3.4.4,Ejecución,Especialista de adquisiciones,17,3.4.4-36,2029-01-17,2029-02-08,0,si
3.4.4-38,Invitar a las firmas de la lista corta y recibir las propuestas de la evaluación final,3.4.4,Ejecución,Especialista de adquisiciones,20,3.4.4-37,2029-02-09,2029-03-08,0,si
3.4.4-39,Evaluar las propuestas y negociar el contrato de la evaluación final,3.4.4,Ejecución,Especialista de adquisiciones,34,3.4.4-38,2029-03-09,2029-04-25,0,si
3.4.4-40,Adjudicar y firmar el contrato de la evaluación final,3.4.4,Ejecución,CEPA,10,3.4.4-39,2029-04-26,2029-05-09,0,si
3.5.1-01,Solicitar el primer desembolso por Anticipo de Fondos con las condiciones previas cumplidas,3.5.1,Ejecución,Especialista financiero,10,"3.1.1-05,3.1.2-03,3.1.3-03,3.1.4-03,3.3.1-04",2026-07-20,2026-07-31,666,
3.5.1-02,Elaborar y presentar al BID el informe semestral de progreso del semestre S2 de 2026 con la solicitud de desembolso,3.5.1,Monitoreo y control,Especialista de planificación y monitoreo,19,3.5.1-01,2027-01-01,2027-01-27,698,
3.5.1-03,Elaborar y presentar al BID el informe semestral de progreso del semestre S1 de 2027 con la solicitud de desembolso,3.5.1,Monitoreo y control,Especialista de planificación y monitoreo,19,3.5.1-02,2027-07-01,2027-07-27,588,
3.5.1-04,Elaborar y presentar al BID el informe semestral de progreso del semestre S2 de 2027 con la solicitud de desembolso,3.5.1,Monitoreo y control,Especialista de planificación y monitoreo,19,3.5.1-03,2028-01-03,2028-01-27,475,
3.5.1-05,Elaborar y presentar al BID el informe semestral de progreso del semestre S1 de 2028 con la solicitud de desembolso,3.5.1,Monitoreo y control,Especialista de planificación y monitoreo,19,3.5.1-04,2028-07-03,2028-07-27,364,
3.5.1-06,Elaborar y presentar al BID el informe semestral de progreso del semestre S2 de 2028 con la solicitud de desembolso,3.5.1,Monitoreo y control,Especialista de planificación y monitoreo,19,3.5.1-05,2029-01-01,2029-01-25,253,
3.5.1-07,Elaborar y presentar al BID el informe semestral de progreso del semestre S1 de 2029 con la solicitud de desembolso,3.5.1,Monitoreo y control,Especialista de planificación y monitoreo,19,3.5.1-06,2029-07-02,2029-07-26,142,
3.5.1-08,Justificar los gastos y tramitar las solicitudes de desembolso del año 2027,3.5.1,Monitoreo y control,Especialista financiero,280,3.5.1-01,2027-01-01,2028-01-27,557,
3.5.1-09,Justificar los gastos y tramitar las solicitudes de desembolso del año 2028,3.5.1,Monitoreo y control,Especialista financiero,279,3.5.1-01,2028-01-03,2029-01-25,297,
3.5.1-10,Justificar los gastos y tramitar las solicitudes de desembolso del año 2029,3.5.1,Monitoreo y control,Especialista financiero,168,3.5.1-01,2029-01-01,2029-08-22,148,
3.5.2-01,Preparar los estados financieros del programa del ejercicio 2026,3.5.2,Monitoreo y control,Especialista financiero,20,3.1.4-03,2027-01-01,2027-01-28,605,
3.5.2-02,Auditar los estados financieros del programa del ejercicio 2026,3.5.2,Monitoreo y control,Auditor externo,30,"3.4.4-15,3.5.2-01",2027-05-06,2027-06-16,536,
3.5.2-03,Presentar al BID los estados financieros auditados del ejercicio 2026,3.5.2,Monitoreo y control,Especialista financiero,5,3.5.2-02,2027-06-17,2027-06-23,536,
3.5.2-04,Preparar los estados financieros del programa del ejercicio 2027,3.5.2,Monitoreo y control,Especialista financiero,20,3.5.2-03,2028-01-03,2028-01-28,399,
3.5.2-05,Auditar los estados financieros del programa del ejercicio 2027,3.5.2,Monitoreo y control,Auditor externo,30,"3.4.4-20,3.5.2-04",2028-01-31,2028-03-10,399,
3.5.2-06,Presentar al BID los estados financieros auditados del ejercicio 2027,3.5.2,Monitoreo y control,Especialista financiero,5,3.5.2-05,2028-03-13,2028-03-17,399,
3.5.2-07,Preparar los estados financieros del programa del ejercicio 2028,3.5.2,Monitoreo y control,Especialista financiero,20,3.5.2-06,2029-01-01,2029-01-26,194,
3.5.2-08,Auditar los estados financieros del programa del ejercicio 2028,3.5.2,Monitoreo y control,Auditor externo,30,"3.4.4-25,3.5.2-07",2029-01-29,2029-03-09,194,
3.5.2-09,Presentar al BID los estados financieros auditados del ejercicio 2028,3.5.2,Monitoreo y control,Especialista financiero,5,3.5.2-08,2029-03-12,2029-03-16,194,
3.5.3-01,Proyectar en el POA 2028 la fecha del hito de medio término (50% desembolsado o 50% del plazo de desembolsos),3.5.3,Planificación,Especialista de planificación y monitoreo,5,3.2.2-03:II+0,2027-11-01,2027-11-05,201,
3.5.3-02,Ejecutar la evaluación de medio término: avance físico y financiero y medición temprana de resultados,3.5.3,Monitoreo y control,Firma consultora,85,3.4.4-35,2028-03-22,2028-07-18,201,
3.5.3-03,Revisar el informe de evaluación de medio término y presentarlo al BID,3.5.3,Monitoreo y control,Especialista de planificación y monitoreo,10,3.5.3-02,2028-07-19,2028-08-01,201,
3.5.3-04,Ejecutar la evaluación final de efectividad sin atribución empírica,3.5.3,Cierre,Firma consultora,126,"3.4.4-40,3.5.3-03",2029-05-10,2029-11-01,0,si
3.5.3-05,Revisar el informe de evaluación final y presentarlo al BID,3.5.3,Cierre,Especialista de planificación y monitoreo,10,"3.5.3-04,1.7.4-05,1.7.4-06,1.7.4-07,1.7.4-08",2029-11-02,2029-11-15,0,si
3.5.4-01,"Liquidar los contratos de obra, supervisión y consultoría",3.5.4,Cierre,Especialista de adquisiciones,20,"2.1-06,2.2.1-06,2.2.2-04,2.3.1-06,2.3.2-04,2.4-06,2.5-06,2.6.1-06,2.6.2-04,2.7-06,2.8-06,2.9-06,1.7.4-05,1.7.4-06,1.7.4-07,1.7.4-08",2029-07-26,2029-08-22,61,
3.5.4-02,Justificar los anticipos pendientes y tramitar el último desembolso,3.5.4,Cierre,Especialista financiero,20,"3.5.4-01,3.5.3-05",2029-11-16,2029-12-13,0,si
3.5.4-03,Auditar y presentar al BID los estados financieros finales del programa,3.5.4,Cierre,Auditor externo,42,"3.4.4-30,3.5.4-02,3.5.2-09",2029-12-14,2030-02-11,0,si
3.5.4-04,"Preparar y entregar al BID los insumos de la UEP para el informe de terminación del programa, con las lecciones aprendidas",3.5.4,Cierre,Coordinador del Programa,25,"3.3.4-03,3.5.3-05,3.5.4-03,3.5.1-07",2030-02-12,2030-03-18,0,si
3.5.4-05,Devolver los saldos no justificados al BID y cerrar la cuenta especial,3.5.4,Cierre,Especialista financiero,15,3.5.4-03,2030-02-12,2030-03-04,10,
3.5.4-06,Cerrar el expediente administrativo del programa y archivar los documentos,3.5.4,Cierre,Técnico de apoyo administrativo,10,"3.5.4-04,3.5.4-05,1.7.1-02,1.7.1-04,1.7.1-05,1.7.1-06,1.7.2-02,1.7.2-04,1.7.2-05,1.7.2-06,1.7.3-05,1.7.3-06,3.2.2-08,3.2.3-05,3.3.3-03,3.4.4-10,3.5.1-08,3.5.1-09,3.5.1-10",2030-03-19,2030-04-01,0,si
